# 项目管理实施主计划01

Schedule from MS Project, 2010-05-21 to 2011-06-21.
ZHYONG

## Calendars

- 标准: Mon-Fri 08:00-12:00, 13:00-17:00; Sat-Sun off. Exceptions (off unless hours are given): 2010-05-22 to 2010-05-23 08:00-12:00, 13:00-17:00, 2010-05-29 to 2010-05-30 08:00-12:00, 13:00-17:00, 2010-06-05 to 2010-06-06 08:00-12:00, 13:00-17:00, 2010-06-12 to 2010-06-13 08:00-12:00, 13:00-17:00, 2010-06-19 to 2010-06-20 08:00-12:00, 13:00-17:00, 2010-06-26 to 2010-06-27 08:00-12:00, 13:00-17:00, 2010-07-03 to 2010-07-04 08:00-12:00, 13:00-17:00, 2010-07-10 to 2010-07-11 08:00-12:00, 13:00-17:00, 2010-07-17 to 2010-07-18 08:00-12:00, 13:00-17:00, 2010-07-24 to 2010-07-25 08:00-12:00, 13:00-17:00, 2010-07-31 to 2010-08-01 08:00-12:00, 13:00-17:00, 2010-08-07 to 2010-08-08 08:00-12:00, 13:00-17:00, 2010-08-14 to 2010-08-15 08:00-12:00, 13:00-17:00, 2010-08-21 to 2010-08-22 08:00-12:00, 13:00-17:00, 2010-08-25 08:00-12:00, 13:00-17:00, 2010-08-28 to 2010-08-29 08:00-12:00, 13:00-17:00, 2010-09-04 to 2010-09-05 08:00-12:00, 13:00-17:00, 2010-09-11 to 2010-09-12 08:00-12:00, 13:00-17:00, 2010-09-18 to 2010-09-19 08:00-12:00, 13:00-17:00, 2010-09-22 08:00-12:00, 13:00-17:00, 2010-09-25 to 2010-09-26 08:00-12:00, 13:00-17:00, 2010-10-01 to 2010-10-07, 2010-10-09 to 2010-10-10 08:00-12:00, 13:00-17:00, 2010-10-16 to 2010-10-17 08:00-12:00, 13:00-17:00, 2010-10-20 08:00-12:00, 13:00-17:00, 2010-10-23 to 2010-10-24 08:00-12:00, 13:00-17:00, 2010-10-30 to 2010-10-31 08:00-12:00, 13:00-17:00, 2010-11-06 to 2010-11-07 08:00-12:00, 13:00-17:00, 2010-11-13 to 2010-11-14 08:00-12:00, 13:00-17:00, 2010-11-20 to 2010-11-21 08:00-12:00, 13:00-17:00, 2010-11-24 08:00-12:00, 13:00-17:00, 2010-11-27 to 2010-11-28 08:00-12:00, 13:00-17:00, 2010-12-04 to 2010-12-05 08:00-12:00, 13:00-17:00, 2010-12-11 to 2010-12-12 08:00-12:00, 13:00-17:00, 2010-12-18 to 2010-12-19 08:00-12:00, 13:00-17:00, 2010-12-25 to 2010-12-26 08:00-12:00, 13:00-17:00, 2011-01-01 08:00-12:00, 13:00-17:00, 2011-02-05 to 2011-02-06 08:00-12:00, 13:00-17:00, 2011-02-12 to 2011-02-13 08:00-12:00, 13:00-17:00, 2011-02-19 to 2011-02-20 08:00-12:00, 13:00-17:00, 2011-02-26 to 2011-02-27 08:00-12:00, 13:00-17:00, 2011-03-05 to 2011-03-06 08:00-12:00, 13:00-17:00, 2011-03-12 to 2011-03-13 08:00-12:00, 13:00-17:00, 2011-03-19 to 2011-03-20 08:00-12:00, 13:00-17:00, 2011-03-26 to 2011-03-27 08:00-12:00, 13:00-17:00, 2011-04-02 to 2011-04-03 08:00-12:00, 13:00-17:00, 2011-04-09 to 2011-04-10 08:00-12:00, 13:00-17:00, 2011-04-16 to 2011-04-17 08:00-12:00, 13:00-17:00, 2011-04-23 to 2011-04-24 08:00-12:00, 13:00-17:00, 2011-04-30 08:00-12:00, 13:00-17:00.

## Resources

| Resource |
| --- |
| 主导 |
| 协助 |

## Schedule

| ID | WBS | Task | Duration | Start | Finish | Predecessors | Total slack | Free slack | Constraint | Work | Text22 | Text24 | Text29 |
| --- | --- | --- | --- | --- | --- | --- | --- | --- | --- | --- | --- | --- | --- |
| 1 | 1 | **金意陶NC-ERP项目业务系统实施** | 365.5d? | 2010-05-21 | 2011-06-21 |  | -590.5d | 0d |  | 1588h |  |  |  |
| 2 | 1.1 | **项目启动** | 36d? | 2010-05-21 | 2010-06-25 |  | -590.5d | 0d |  |  |  |  |  |
| 3 | 1.1.1 | **项目启动准备** | 36d | 2010-05-21 | 2010-06-25 |  | 329.5d |  |  |  |  |  |  |
| 4 | 1.1.1.1 | 项目组织确定 | 1d | 2010-05-21 | 2010-05-21 |  | 364.5d |  | finish no earlier than 2010-05-21 |  | 主导 | 协助 | 《项目组织结构图》《项目组通讯录》 |
| 5 | 1.1.1.2 | **项目管理相关制度确定** | 2d | 2010-05-21 | 2010-05-22 |  | 363.5d |  |  |  | 协助 | 主导 |  |
| 6 | 1.1.1.2.1 | 项目文档管理制度 | 2d | 2010-05-21 | 2010-05-22 |  | 363.5d |  | start no earlier than 2010-05-21 |  | 协助 | 主导 | 《项目文档管理制度》 |
| 7 | 1.1.1.2.2 | 项目补丁管理制度 | 2d | 2010-05-21 | 2010-05-22 |  | 363.5d |  | start no earlier than 2010-05-21 |  | 协助 | 主导 | 《项目补丁管理制度》 |
| 8 | 1.1.1.2.3 | 项目问题管理制度 | 2d | 2010-05-21 | 2010-05-22 |  | 363.5d |  | start no earlier than 2010-05-21 |  | 协助 | 主导 | 《项目问题管理制度》 |
| 9 | 1.1.1.2.4 | 项目奖励方案 | 2d | 2010-05-21 | 2010-05-22 |  | 363.5d |  | start no earlier than 2010-05-21 |  | 协助 | 辅助 | 《项目奖励方案》 |
| 10 | 1.1.1.3 | 实施工作任务书确定 | 32d | 2010-05-25 | 2010-06-25 |  | 329.5d |  | start no earlier than 2010-05-25 |  | 协助 | 主导 | 《实施工作任务书》 |
| 11 | 1.1.2 | **项目实施主计划** | 3d | 2010-05-21 | 2010-05-23 |  | 362.5d |  |  |  |  |  |  |
| 12 | 1.1.2.1 | 项目实施主计划制定 | 2d | 2010-05-21 | 2010-05-22 |  | 362.5d | 0d | start no earlier than 2010-05-21 |  | 协助 | 主导 |  |
| 13 | 1.1.2.2 | 项目主计划确定 | 1d | 2010-05-23 | 2010-05-23 | 12 | 362.5d |  |  |  | 协助 | 主导 | 《项目实施主计划》 |
| 14 | 1.1.3 | **项目启动会** | 10d? | 2010-05-21 | 2010-05-30 |  | -592.5d | 0d |  |  | 主导 | 协助 |  |
| 15 | 1.1.3.1 | 启动会会务组织 | 4d | 2010-05-21 | 2010-05-24 |  | -586.5d | 0d | start no earlier than 2010-05-21 |  |  |  |  |
| 16 | 1.1.3.2 | **启动会文件准备** | 3d | 2010-05-21 | 2010-05-23 |  | -590.5d | 0d |  |  |  |  |  |
| 17 | 1.1.3.2.1 | 启动会主持人PPT | 3d | 2010-05-21 | 2010-05-23 |  | -590.5d | 0d | start no earlier than 2010-05-21 |  |  |  |  |
| 18 | 1.1.3.2.2 | 启动会项目经理PPT | 3d | 2010-05-21 | 2010-05-23 |  | -590.5d | 0d | start no earlier than 2010-05-21 |  |  |  |  |
| 19 | 1.1.3.3 | 启动会 | 0.5d | 2010-05-26 | 2010-05-26 | 16 | -592.5d | 0d | start no earlier than 2010-05-26 |  |  |  |  |
| 20 | 1.1.3.4 | 项目组实施工作准备会 | 0.5d | 2010-05-26 | 2010-05-26 | 19 | -592.5d | 0d |  |  |  |  |  |
| 21 | 1.1.3.5 | 实施工作任务书讨论确定 | 3d | 2010-05-27 | 2010-05-29 | 20 | -592.5d | 0d |  |  |  |  |  |
| 22 | 1.1.3.6 | 项目组项目管理制度宣贯及实施工具内部培训 | 1d? | 2010-05-30 | 2010-05-30 | 21 | -592.5d | 0d |  |  |  |  |  |
| 23 | 1.2 | **OA系统实施** | 49d? | 2010-06-01 | 2010-07-19 | 14 | -593.5d | 0d |  |  |  |  |  |
| 24 | 1.2.1 | 需求调研 | 7d | 2010-06-01 | 2010-06-07 |  | -593.5d | 0d | start no earlier than 2010-06-01 |  |  |  |  |
| 25 | 1.2.2 | 应用系统设计，流程规划 | 20d | 2010-06-08 | 2010-06-27 | 24 | -593.5d | 0d |  |  |  |  |  |
| 26 | 1.2.3 | 应用系统安装 | 1d? | 2010-06-28 | 2010-06-28 | 25 | -593.5d | 0d |  |  |  |  |  |
| 27 | 1.2.4 | 应用系统配置 | 3d | 2010-06-29 | 2010-07-01 | 26 | -593.5d | 0d |  |  |  |  |  |
| 28 | 1.2.5 | 应用方案测试 | 10d | 2010-07-02 | 2010-07-11 | 27 | -593.5d | 0d |  |  |  |  |  |
| 29 | 1.2.6 | 应用方案确认 | 3d | 2010-07-12 | 2010-07-14 | 28 | -593.5d | 0d |  |  |  |  |  |
| 30 | 1.2.7 | 应用系统培训 | 3d | 2010-07-15 | 2010-07-17 | 29 | -593.5d | 0d |  |  |  |  |  |
| 31 | 1.2.8 | 系统上线切换 | 1d? | 2010-07-18 | 2010-07-18 | 30 | -593.5d | 0d |  |  |  |  |  |
| 32 | 1.2.9 | OA系统验收 | 1d? | 2010-07-19 | 2010-07-19 | 31 | -593.5d | 0d |  |  |  |  |  |

| ID | WBS | Task | Type | Duration | Start | Finish | Predecessors | Total slack | Free slack | Constraint | Text10 | Text29 | Text26 |
| --- | --- | --- | --- | --- | --- | --- | --- | --- | --- | --- | --- | --- | --- |
| 33 | 1.3 | **HR系统实施** |  | 102.5d? | 2010-08-09 | 2010-11-26 |  | 183d |  |  |  |  |  |
| 34 | 1.3.1 | **蓝图设计** |  | 60.5d? | 2010-08-09 | 2010-10-15 |  | 183d |  |  |  |  |  |
| 35 | 1.3.1.1 | **需求分析** |  | 33d? | 2010-08-09 | 2010-09-10 |  | 187d | 2d |  |  |  |  |
| 36 | 1.3.1.1.1 | 调研计划沟通及确认 |  | 1d | 2010-08-09 | 2010-08-09 |  | 189d | 0d | start no earlier than 2010-08-09 |  |  |  |
| 37 | 1.3.1.1.2 | 调研资料清单准备、培训收集方法 |  | 2d | 2010-08-10 | 2010-08-11 | 36 | 189d | 0d | finish no earlier than 2010-04-07 | 《调研资料收集清单》 | 《调研资料收集清单》 |  |
| 38 | 1.3.1.1.3 | 调研资料收集 |  | 5d | 2010-08-12 | 2010-08-16 | 37 | 189d | 0d | finish no earlier than 2010-08-16 |  |  |  |
| 39 | 1.3.1.1.4 | 调研资料整理分析及修订调研问卷 |  | 2d | 2010-08-17 | 2010-08-18 | 38 | 189d | 0d | start no earlier than 2010-08-17 | 《调研资料重点内容记录文档》《调研问卷》 | 《调研资料重点内容记录文档》《调研问卷》 | 成果产出已提交 |
| 40 | 1.3.1.1.5 | 业务需求调研 |  | 5d | 2010-08-19 | 2010-08-23 | 39 | 189d | 2d | start no earlier than 2010-08-19 |  |  |  |
| 41 | 1.3.1.1.6 | 需求分析报告初稿编写 |  | 7d | 2010-08-26 | 2010-09-01 | 40 | 187d | 0d | start no earlier than 2010-08-26 | 《E-HR需求分析报告（初稿）》《项目验收基准》《业务诊断报告》 | 《E-HR需求分析报告（初稿）》《项目验收基准》《业务诊断报告》 |  |
| 42 | 1.3.1.1.7 | 需求分析报告内部评审 |  | 1d | 2010-09-02 | 2010-09-02 | 41 | 187d | 0d | start no earlier than 2010-09-02 |  |  |  |
| 43 | 1.3.1.1.8 | 提交需求分析报告及客户方审阅 |  | 5d | 2010-09-03 | 2010-09-07 | 42 | 187d | 0d | start no earlier than 2010-09-03 |  |  |  |
| 44 | 1.3.1.1.9 | 业务需求讨论和评审 |  | 2d? | 2010-09-08 | 2010-09-09 | 43 | 187d | 0d | start no earlier than 2010-09-08 |  |  |  |
| 45 | 1.3.1.1.10 | 业务需求分析报告确认 | milestone | 1d? | 2010-09-10 | 2010-09-10 | 44 | 187d | 2d | start no earlier than 2010-09-10 | 《E-HR需求分析报告（终稿）》《项目验收基准》《业务诊断报告》 | 《E-HR需求分析报告（终稿）》《项目验收基准》《业务诊断报告》 |  |
| 46 | 1.3.1.2 | **方案设计与方案验收** |  | 25.5d? | 2010-09-13 | 2010-10-15 | 35 | 183d | 0d |  |  |  |  |
| 47 | 1.3.1.2.1 | 应用解决方案初稿编写 |  | 7d | 2010-09-13 | 2010-09-19 | 45 | 185d | 2d | start no earlier than 2010-09-13 | 《E-HR应用解决方案（初稿）》 | 《E-HR应用解决方案（初稿）》 |  |
| 48 | 1.3.1.2.2 | 方案模拟库建立及内部测试 |  | 7d | 2010-09-22 | 2010-09-28 | 47 | 183d | 0d | start no earlier than 2010-09-22 |  |  |  |
| 49 | 1.3.1.2.3 | 解决方案修订 |  | 1d | 2010-09-29 | 2010-09-29 | 48 | 183d | 0d | start no earlier than 2010-09-29 | 《E-HR应用解决方案（修订稿）》 | 《E-HR应用解决方案（修订稿）》 |  |
| 50 | 1.3.1.2.4 | **应用方案培训** |  | 1.5d? | 2010-09-30 | 2010-10-08 | 49 | 183d | 0d |  |  |  |  |
| 51 | 1.3.1.2.4.1 | 培训计划 |  | 1d? | 2010-09-30 | 2010-09-30 |  | 183d | 0d | start no earlier than 2010-09-30 | 《培训计划》 | 《培训计划》 |  |
| 52 | 1.3.1.2.4.2 | 培训环境及培训资料准备 | milestone | 0d? | 2010-10-01 | 2010-10-01 | 51 | 183d | 0d | start no earlier than 2010-10-01 | 《培训大纲、岗位操作手册、培训PPT、练习题、考核题》 | 《培训大纲、岗位操作手册、培训PPT、练习题、考核题》 |  |
| 53 | 1.3.1.2.4.3 | 培训开展及考核 | milestone | 0d | 2010-10-05 | 2010-10-05 | 52 | 183d | 0d | start no earlier than 2010-10-05 | 《培训考勤表》《培训制度》 | 《培训考勤表》《培训制度》 |  |
| 54 | 1.3.1.2.4.4 | 培训总结 |  | 0.5d? | 2010-10-08 | 2010-10-08 | 53 | 183d |  | start no earlier than 2010-10-08 | 《培训总结》《培训考核成绩表》 | 《培训总结》《培训考核成绩表》 |  |
| 55 | 1.3.1.2.5 | 应用解决方案讨论和确认 | milestone | 7d | 2010-10-08 | 2010-10-15 | 50 | 183d |  | start no earlier than 2010-10-08 |  |  |  |
| 56 | 1.3.2 | **系统建设** |  | 24d? | 2010-10-15 | 2010-11-08 | 46 | 183d | 0d |  |  |  |  |
| 57 | 1.3.2.1 | **初始化及配置系统** |  | 5d? | 2010-10-15 | 2010-10-20 |  | 183d | 0d |  |  |  |  |
| 58 | 1.3.2.1.1 | 配置计划沟通 |  | 3d | 2010-10-15 | 2010-10-18 |  | 185d |  | start no earlier than 2010-10-15 |  |  |  |
| 59 | 1.3.2.1.2 | 初始化系统 |  | 5d? | 2010-10-15 | 2010-10-20 |  | 183d |  | start no earlier than 2010-10-15 |  |  |  |
| 60 | 1.3.2.1.3 | 检查配置情况 |  | 3d | 2010-10-15 | 2010-10-18 |  | 185d |  | start no earlier than 2010-10-15 |  |  |  |

| ID | WBS | Task | Type | Duration | Start | Finish | Predecessors | Total slack | Free slack | Constraint | Text10 | Text29 |
| --- | --- | --- | --- | --- | --- | --- | --- | --- | --- | --- | --- | --- |
| 61 | 1.3.2.2 | **系统测试** |  | 19d? | 2010-10-20 | 2010-11-08 | 57 | 183d |  |  |  |  |
| 62 | 1.3.2.2.1 | 测试计划沟通与确认 |  | 1d | 2010-10-20 | 2010-10-21 |  | 183d | 0d | start no earlier than 2010-10-20 | 《E-HR系统测试计划》 | 《E-HR系统测试计划》 |
| 63 | 1.3.2.2.2 | 测试方案案例编写与确认、测试环境准备 |  | 5d | 2010-10-21 | 2010-10-26 | 62 | 183d | 0d | start no earlier than 2010-10-21 | 《E-HR系统测试方案与案例》 | 《E-HR系统测试方案与案例》 |
| 64 | 1.3.2.2.3 | HR业务测试 |  | 7d | 2010-10-26 | 2010-11-02 | 63 | 183d | 0d | start no earlier than 2010-10-26 | 《E-HR方案测试问题列表》 | 《E-HR方案测试问题列表》 |
| 65 | 1.3.2.2.4 | 测试总结 | milestone | 1d | 2010-11-02 | 2010-11-03 | 64 | 183d | 0d | start no earlier than 2010-11-02 | 《E-HR系统测试总结报告》 | 《E-HR系统测试总结报告》 |
| 66 | 1.3.2.2.5 | 解决测试问题及调整业务解决方案为终版 |  | 5d? | 2010-11-03 | 2010-11-08 | 65 | 183d |  | start no earlier than 2010-11-03 | 《E-HR应用解决方案（终稿）》 | 《E-HR应用解决方案（终稿）》 |
| 67 | 1.3.3 | **切换上线** |  | 16d? | 2010-11-08 | 2010-11-24 | 56 | 183d | 0d |  |  |  |
| 68 | 1.3.3.1 | 最终用户权限划分 |  | 1d? | 2010-11-08 | 2010-11-09 |  | 198d |  | start no earlier than 2010-11-08 |  |  |
| 69 | 1.3.3.2 | 岗位操作说明书编写 |  | 7d | 2010-11-08 | 2010-11-15 |  | 183d | 0d | start no earlier than 2010-11-08 | 《E-HR系统岗位操作说明书》 | 《E-HR系统岗位操作说明书》 |
| 70 | 1.3.3.3 | 系统运行制度编写 |  | 3d | 2010-11-08 | 2010-11-11 |  | 196d |  | start no earlier than 2010-11-08 |  |  |
| 71 | 1.3.3.4 | **组织人事数据采集及导入** |  | 16d? | 2010-11-08 | 2010-11-24 |  | 183d |  |  |  |  |
| 72 | 1.3.3.4.1 | 数据采集方案编写 |  | 3d | 2010-11-08 | 2010-11-11 |  | 183d | 0d | start no earlier than 2010-11-08 | 《人事、组织采集方案》 | 《人事、组织采集方案》 |
| 73 | 1.3.3.4.2 | 数据采集培训 |  | 1d? | 2010-11-11 | 2010-11-12 | 72 | 183d | 0d | start no earlier than 2010-11-11 |  |  |
| 74 | 1.3.3.4.3 | 数据采集开展 |  | 7d | 2010-11-12 | 2010-11-19 | 73 | 183d | 0d | start no earlier than 2010-11-12 |  |  |
| 75 | 1.3.3.4.4 | 数据导入或录入 |  | 5d | 2010-11-19 | 2010-11-24 | 74 | 183d |  | start no earlier than 2010-11-19 |  |  |
| 76 | 1.3.3.5 | **最终培训用户** |  | 8d? | 2010-11-15 | 2010-11-23 |  | 183d |  |  |  |  |
| 77 | 1.3.3.5.1 | 培训计划 |  | 1d? | 2010-11-15 | 2010-11-16 | 69 | 183d | 0d | start no earlier than 2010-11-15 | 《最终用户培训计划》 | 《最终用户培训计划》 |
| 78 | 1.3.3.5.2 | 培训环境及培训资料准备 |  | 2d? | 2010-11-16 | 2010-11-18 | 77 | 183d | 0d | start no earlier than 2010-11-16 | 《培训大纲、岗位操作手册、培训PPT、练习题、考核题》 | 《培训大纲、岗位操作手册、培训PPT、练习题、考核题》 |
| 79 | 1.3.3.5.3 | 培训开展及考核 |  | 4d? | 2010-11-18 | 2010-11-22 | 78 | 183d | 0d | start no earlier than 2010-11-18 | 《培训考勤表》《培训制度》 | 《培训考勤表》《培训制度》 |
| 80 | 1.3.3.5.4 | 培训总结 |  | 1d? | 2010-11-22 | 2010-11-23 | 79 | 184d |  | start no earlier than 2010-11-22 | 《培训总结》《培训考核成绩表》 | 《培训总结》《培训考核成绩表》 |
| 81 | 1.3.3.6 | 导入的人事组织数据核对 |  | 2d | 2010-11-22 | 2010-11-24 | 79 | 183d |  | start no earlier than 2010-11-22 |  |  |
| 82 | 1.3.3.7 | **薪资上线** |  | 9d | 2010-11-08 | 2010-11-17 |  | 188d | 0d |  |  |  |
| 83 | 1.3.3.7.1 | 薪资上线前动态数据准备 |  | 2d | 2010-11-08 | 2010-11-10 |  | 188d | 0d | start no earlier than 2010-11-08 |  |  |
| 84 | 1.3.3.7.2 | 薪资上线指南准备 |  | 2d | 2010-11-08 | 2010-11-10 |  | 195d |  | start no earlier than 2010-11-08 |  |  |
| 85 | 1.3.3.7.3 | 薪资集中上线及核对 |  | 7d | 2010-11-10 | 2010-11-17 | 83 | 188d |  | start no earlier than 2010-11-10 |  |  |
| 86 | 1.3.3.8 | 上线报告签定 | milestone | 2d | 2010-11-17 | 2010-11-19 | 82 | 188d |  | start no earlier than 2010-11-17 | 《上线报告》 | 《上线报告》 |
| 87 | 1.3.3.9 | 上线持续支持 |  | 14d? | 2010-11-08 | 2010-11-22 |  | 185d |  | start no earlier than 2010-11-08 |  |  |

| ID | WBS | Task | Type | Duration | Start | Finish | Predecessors | Baseline start | Baseline finish | Baseline duration | Total slack | Free slack | Constraint | Work | Text10 | Text29 | Text2 | Text3 | Text22 | Text24 |
| --- | --- | --- | --- | --- | --- | --- | --- | --- | --- | --- | --- | --- | --- | --- | --- | --- | --- | --- | --- | --- |
| 88 | 1.3.4 | **项目验收** |  | 2d? | 2010-11-24 | 2010-11-26 | 67 |  |  |  | 183d |  |  |  |  |  |  |  |  |  |
| 89 | 1.3.4.1 | 项目总结 |  | 2d? | 2010-11-24 | 2010-11-26 |  |  |  |  | 183d |  | start no earlier than 2010-11-24 |  |  |  |  |  |  |  |
| 90 | 1.3.4.2 | 项目验收 | milestone | 1d? | 2010-11-24 | 2010-11-25 |  |  |  |  | 184d |  | start no earlier than 2010-11-24 |  | 《验收报告》 | 《验收报告》 |  |  |  |  |
| 91 | 1.4 | **财务供应链系统实施** |  | 262.5d? | 2010-09-01 | 2011-06-21 |  |  |  |  | -636.5d | 0d |  | 1588h |  |  |  |  |  |  |
| 92 | 1.4.1 | **需求调研** |  | 18.5d? | 2010-09-01 | 2010-09-19 |  | 2007-08-27 | 2007-08-27 | 1d? | -636.5d | 0d |  |  |  |  |  |  |  |  |
| 93 | 1.4.1.1 | 企业高层调研 |  | 0.5d | 2010-09-01 | 2010-09-01 | 23 |  |  |  | -636.5d | 0d | start no earlier than 2010-09-01 |  |  |  |  |  |  |  |
| 94 | 1.4.1.2 | 业务系统调研计划编制和确定 |  | 2d | 2010-09-01 | 2010-09-03 | 93 |  |  |  | -636.5d | 0d | start no earlier than 2010-04-07 |  |  | 《业务调研计划》 |  |  |  |  |
| 95 | 1.4.1.3 | **佛山地区** |  | 9d | 2010-09-03 | 2010-09-12 | 94 |  |  |  | -636.5d | 0d |  |  |  |  |  |  |  |  |
| 96 | 1.4.1.3.1 | **财务模块调研** |  | 6d | 2010-09-03 | 2010-09-09 |  | 2007-08-27 | 2007-08-27 | 1d? | -636.5d | 0d |  |  |  | 《调研提纲》 | 协助 | 主导 | 协助 | 主导 |
| 97 | 1.4.1.3.1.1 | 总帐 |  | 2d | 2010-09-03 | 2010-09-05 |  |  |  |  | -636.5d | 0d |  |  |  |  |  |  |  |  |
| 98 | 1.4.1.3.1.2 | 收付 |  | 2d | 2010-09-05 | 2010-09-07 | 97 |  |  |  | -636.5d | 0d |  |  |  |  |  |  |  |  |
| 99 | 1.4.1.3.1.3 | 资金 |  | 2d | 2010-09-07 | 2010-09-09 | 98 |  |  |  | -636.5d | 0d |  |  |  |  |  |  |  |  |
| 100 | 1.4.1.3.1.4 | 成本 |  | 2d | 2010-09-03 | 2010-09-05 |  |  |  |  | 255d |  |  |  |  |  |  |  |  |  |
| 101 | 1.4.1.3.2 | **供应链模块调研** |  | 3d | 2010-09-09 | 2010-09-12 | 99 |  |  |  | -636.5d | 0d |  |  |  | 《调研提纲》 |  |  | 协助 | 主导 |
| 102 | 1.4.1.3.2.1 | 采购业务 |  | 2d | 2010-09-09 | 2010-09-11 |  |  |  |  | -635.5d | 0d |  |  |  |  |  |  |  |  |
| 103 | 1.4.1.3.2.2 | 库存业务 |  | 2d | 2010-09-09 | 2010-09-11 |  |  |  |  | -635.5d | 0d |  |  |  |  |  |  |  |  |
| 104 | 1.4.1.3.2.3 | 销售业务 |  | 3d | 2010-09-09 | 2010-09-12 |  |  |  |  | -636.5d | 0d |  |  |  |  |  |  |  |  |
| 105 | 1.4.1.4 | **景德镇地区** |  | 3d? | 2010-09-12 | 2010-09-15 | 95 |  |  |  | 248d |  |  |  |  |  |  |  |  |  |
| 106 | 1.4.1.4.1 | **财务模块调研** |  | 3d? | 2010-09-12 | 2010-09-15 |  |  |  |  | 248d |  |  |  |  |  |  |  |  |  |
| 107 | 1.4.1.4.1.1 | 总帐 |  | 1d? | 2010-09-12 | 2010-09-13 |  |  |  |  | 248d | 0d |  |  |  |  |  |  |  |  |
| 108 | 1.4.1.4.1.2 | 收付 |  | 1d? | 2010-09-13 | 2010-09-14 | 107 |  |  |  | 248d | 0d |  |  |  |  |  |  |  |  |
| 109 | 1.4.1.4.1.3 | 资金 |  | 1d? | 2010-09-14 | 2010-09-15 | 108 |  |  |  | 248d |  |  |  |  |  |  |  |  |  |
| 110 | 1.4.1.4.1.4 | **供应链模块调研** |  | 1d? | 2010-09-12 | 2010-09-13 |  |  |  |  | 250d |  |  |  |  | 《调研提纲》 |  |  | 协助 | 主导 |
| 111 | 1.4.1.4.1.4.1 | 采购业务 |  | 1d? | 2010-09-12 | 2010-09-13 |  |  |  |  | 250d |  |  |  |  |  |  |  |  |  |
| 112 | 1.4.1.4.1.4.2 | 库存业务 |  | 1d? | 2010-09-12 | 2010-09-13 |  |  |  |  | 250d |  |  |  |  |  |  |  |  |  |
| 113 | 1.4.1.4.1.4.3 | 销售业务 |  | 1d? | 2010-09-12 | 2010-09-13 |  |  |  |  | 250d |  |  |  |  |  |  |  |  |  |
| 114 | 1.4.1.5 | 需求调研补充及问题反馈 |  | 7d | 2010-09-12 | 2010-09-19 | 101 |  |  |  | -636.5d | 0d |  |  |  |  |  |  |  |  |

| ID | WBS | Task | Type | Duration | Start | Finish | Predecessors | Baseline start | Baseline finish | Baseline duration | Total slack | Free slack | Constraint | Resources | Work | Text22 | Text24 | Text29 | Text2 | Text3 |
| --- | --- | --- | --- | --- | --- | --- | --- | --- | --- | --- | --- | --- | --- | --- | --- | --- | --- | --- | --- | --- |
| 115 | 1.4.2 | **蓝图设计** |  | 76d | 2010-09-19 | 2010-12-11 | 114 | 2007-08-27 | 2007-08-27 | 1d? | -636.5d | 0d |  |  | 168h |  |  |  |  |  |
| 116 | 1.4.2.1 | **培训测试系统安装配置** |  | 2d | 2010-09-19 | 2010-09-21 |  |  |  |  | -636.5d | 0d |  |  |  |  |  |  |  |  |
| 117 | 1.4.2.1.1 | 测试环境准备（硬件、网络） |  | 1d | 2010-09-19 | 2010-09-20 |  |  |  |  | -636.5d | 0d | start no earlier than 2010-04-14 |  |  | 主导 | 协助 |  |  |  |
| 118 | 1.4.2.1.2 | 测试环境安装配置 |  | 0.5d | 2010-09-20 | 2010-09-20 | 117 |  |  |  | -636.5d | 0d |  |  |  | 协助 | 主导 |  |  |  |
| 119 | 1.4.2.1.3 | 实施工具安装配置 |  | 0.5d | 2010-09-21 | 2010-09-21 | 118 |  |  |  | -636.5d | 0d | start no earlier than 2010-04-16 |  |  | 协助 | 主导 |  |  |  |
| 120 | 1.4.2.2 | **关键用户培训** |  | 30d | 2010-09-21 | 2010-10-28 | 119 | 2007-08-27 | 2007-08-27 | 1d? | -636.5d | 0d |  |  | 168h |  |  |  |  |  |
| 121 | 1.4.2.2.1 | **培训准备** |  | 8d | 2010-09-21 | 2010-09-29 |  |  |  |  | -636.5d | 0d |  |  |  |  |  |  |  |  |
| 122 | 1.4.2.2.1.1 | 制定和确认培训计划 |  | 1d | 2010-09-21 | 2010-09-22 | 117 |  |  |  | -636.5d | 0d |  |  |  | 协助 | 主导 | 《关键用户培训计划》 |  |  |
| 123 | 1.4.2.2.1.2 | 培训资料和系统环境料准备 |  | 7d | 2010-09-22 | 2010-09-29 | 122 |  |  |  | 234d |  |  |  |  | 协助 | 主导 |  |  |  |
| 124 | 1.4.2.2.1.3 | 培训环境准备（场地、设备、网络调试） |  | 3d | 2010-09-22 | 2010-09-25 | 122 |  |  |  | -636.5d | 0d |  |  |  | 主导 | 协助 |  |  |  |
| 125 | 1.4.2.2.2 | **应用系统培训** |  | 20d | 2010-09-25 | 2010-10-22 | 124 | 2007-09-18 | 2007-09-18 | 1d | -636.5d | 0d |  | 主导 | 168h | 协助 | 主导 | 《培训确认单》 | 主导 | 协助 |
| 126 | 1.4.2.2.2.1 | UAP培训 |  | 2d | 2010-09-25 | 2010-09-27 | 122 |  |  |  | -636.5d | 0d |  |  |  | 协助 | 主导 |  |  |  |
| 127 | 1.4.2.2.2.2 | 供应链系统培训 |  | 10d | 2010-09-27 | 2010-10-14 | 126 |  |  |  | -636.5d | 0d |  |  |  | 协助 | 主导 |  |  |  |
| 128 | 1.4.2.2.2.3 | 财务系统培训 |  | 7d | 2010-10-14 | 2010-10-21 | 127 |  |  |  | -636.5d | 0d |  |  |  | 协助 | 主导 |  |  |  |
| 129 | 1.4.2.2.2.4 | 培训考核 |  | 1d | 2010-10-21 | 2010-10-22 | 128 |  |  |  | -636.5d | 0d |  | 主导 | 8h | 协助 | 主导 | 《培训记录》 | 主导 | 协助 |
| 130 | 1.4.2.2.3 | **实施工具培训** |  | 2d | 2010-10-22 | 2010-10-24 |  |  |  |  | -636.5d | 0d |  |  |  |  |  |  |  |  |
| 131 | 1.4.2.2.3.1 | 实施工具培训（问题管理系统） |  | 0.5d | 2010-10-22 | 2010-10-22 | 129 |  |  |  | -636.5d | 0d |  |  |  | 协助 | 主导 |  |  |  |
| 132 | 1.4.2.2.3.2 | 实施工具培训（补丁管理） |  | 0.5d | 2010-10-23 | 2010-10-23 | 131 |  |  |  | -636.5d | 0d | start no earlier than 2010-04-22 |  |  | 协助 | 主导 |  |  |  |
| 133 | 1.4.2.2.3.3 | 业务流程图绘制培训 |  | 1d | 2010-10-23 | 2010-10-24 | 132 |  |  |  | -636.5d | 0d | start no earlier than 2010-04-23 |  |  | 协助 | 主导 |  |  |  |
| 134 | 1.4.2.2.4 | **系统管理员培训（应用系统维护和设置）** |  | 4d | 2010-10-24 | 2010-10-28 |  |  |  |  | -636.5d | 0d |  |  |  |  |  |  |  |  |
| 135 | 1.4.2.2.4.1 | 应用系统维护（配置、启动、备份等） |  | 2d | 2010-10-24 | 2010-10-26 | 133 |  |  |  | -636.5d | 0d | start no earlier than 2010-04-18 |  |  | 协助 | 主导 |  |  |  |
| 136 | 1.4.2.2.4.2 | 系统管理（权限、模板、参数等） |  | 2d | 2010-10-26 | 2010-10-28 | 135 |  |  |  | -636.5d | 0d |  |  |  | 协助 | 主导 |  |  |  |
| 137 | 1.4.2.3 | **需求分析和蓝图设计** |  | 39d | 2010-10-28 | 2010-12-06 |  |  |  |  | -636.5d | 0d |  |  |  |  |  |  |  |  |
| 138 | 1.4.2.3.1 | 需求调研分析和蓝图设计方案编制 |  | 21d | 2010-10-28 | 2010-11-18 | 136 |  |  |  | -636.5d | 0d | start no earlier than 2010-04-20 |  |  |  | 主导 |  |  |  |
| 139 | 1.4.2.3.2 | 业务蓝图可行性验证测试 |  | 17d | 2010-11-18 | 2010-12-05 | 138 |  |  |  | -636.5d | 0d | start no earlier than 2010-05-09 |  |  | 协助 | 主导 |  |  |  |
| 140 | 1.4.2.3.3 | 需求分析和蓝图设计方案确认 | milestone | 1d | 2010-12-05 | 2010-12-06 | 139 |  |  |  | 166d | 0d | finish no earlier than 2010-05-26 |  |  | 协助 | 主导 | 《需求分析和业务蓝图》《系统应用配置方案》 |  |  |
| 141 | 1.4.2.4 | 二次开发需求分析确认 |  | 5d | 2010-12-06 | 2010-12-11 | 140 |  |  |  | 166d | 0d | start no earlier than 2010-05-27 |  |  | 协助 | 主导 |  |  |  |

| ID | WBS | Task | Duration | Start | Finish | Predecessors | Baseline start | Baseline finish | Baseline duration | Total slack | Free slack | Constraint | Deadline | Resources | Work | Text22 | Text24 | Text29 | Text2 | Text3 | Text28 |
| --- | --- | --- | --- | --- | --- | --- | --- | --- | --- | --- | --- | --- | --- | --- | --- | --- | --- | --- | --- | --- | --- |
| 142 | 1.4.3 | **系统建设** | 99.5d | 2010-12-05 | 2011-03-23 |  |  |  |  | -636.5d | 0d |  |  |  | 540h |  |  |  |  |  |  |
| 143 | 1.4.3.1 | **生产环境安装** | 2d | 2010-12-11 | 2010-12-13 |  |  |  |  | 166d |  |  |  |  |  |  |  |  |  |  |  |
| 144 | 1.4.3.1.1 | 生产环境准备（硬件） | 1d | 2010-12-11 | 2010-12-12 | 141 |  |  |  | 166d | 0d |  |  |  |  | 主导 | 协助 |  |  |  |  |
| 145 | 1.4.3.1.2 | 产品交付及生产环境安装 | 1d | 2010-12-12 | 2010-12-13 | 144 |  |  |  | 166d |  |  |  |  |  | 协助 | 主导 | 《产品安装确认书》 |  |  |  |
| 146 | 1.4.3.2 | **基础数据准备（静态数据）** | 34d | 2010-12-05 | 2011-01-11 |  |  |  |  | -636.5d | 0d |  |  |  | 16h |  |  |  |  |  |  |
| 147 | 1.4.3.2.1 | 基础数据准备计划制定 | 2d | 2010-12-05 | 2010-12-07 | 139 |  |  |  | -636.5d | 0d | start no earlier than 2010-06-03 |  | 主导 | 16h | 协助 | 主导 | 《基础数据准备计划》 | 主导 | 协助 | 《系统解决方案初稿》 |
| 148 | 1.4.3.2.2 | 基础数据准备方案制定 | 1d | 2010-12-07 | 2010-12-08 | 147 |  |  |  | -636.5d | 0d |  |  |  |  | 协助 | 主导 | 《基础数据准备方案》 |  |  |  |
| 149 | 1.4.3.2.3 | 基础数据录入和校验 | 30d | 2010-12-08 | 2011-01-10 | 148 |  |  |  | -636.5d | 0d |  |  |  |  | 主导 | 协助 |  |  |  |  |
| 150 | 1.4.3.2.4 | 基础数据确认 | 1d | 2011-01-10 | 2011-01-11 | 149 | 2007-08-27 | 2007-08-27 | 1d? | -636.5d | 0d | start no earlier than 2010-06-05 | 2008-11-17 |  |  | 主导 | 协助 | 《基础数据确认报告》 |  |  |  |
| 151 | 1.4.3.3 | **应用系统配置** | 65.5d | 2011-01-11 | 2011-03-23 | 150 |  |  |  | 0d |  |  |  | 协助 | 524h | 主导 | 协助 | 《系统应用配置方案》 | 协助 | 主导 | 《系统解决方案》 |
| 152 | 1.4.3.3.1 | **系统配置** | 30d | 2011-01-11 | 2011-02-16 |  |  |  |  | 110d |  |  |  |  |  |  |  |  |  |  |  |
| 153 | 1.4.3.3.1.1 | 应用系统参数及流程配置 | 7d | 2011-01-11 | 2011-01-20 |  |  |  |  | 133d |  |  |  |  |  |  |  |  |  |  |  |
| 154 | 1.4.3.3.1.2 | 系统权限配置 | 7d | 2011-01-11 | 2011-01-20 |  |  |  |  | 133d |  |  |  |  |  |  |  |  |  |  |  |
| 155 | 1.4.3.3.1.3 | 单据模板配置 | 21d | 2011-01-11 | 2011-02-07 |  |  |  |  | 119d |  |  |  |  |  |  |  |  |  |  |  |
| 156 | 1.4.3.3.1.4 | 打印模板配置 | 30d | 2011-01-11 | 2011-02-16 |  |  |  |  | 110d |  |  |  |  |  |  |  |  |  |  |  |
| 157 | 1.4.3.3.1.5 | 系统报表配置（含开发） | 30d | 2011-01-11 | 2011-02-16 |  |  |  |  | 110d |  |  |  |  |  |  |  |  |  |  |  |
| 158 | 1.4.3.3.1.6 | 系统查询模板配置 | 30d | 2011-01-11 | 2011-02-16 |  |  |  |  | 110d |  |  |  |  |  |  |  |  |  |  |  |
| 159 | 1.4.3.3.2 | **业务流程模拟测试** | 65.5d | 2011-01-11 | 2011-03-23 |  |  |  |  | 0d |  |  |  |  |  |  |  |  |  |  |  |
| 160 | 1.4.3.3.2.1 | 模拟测试计划编制和确认 | 3d | 2011-01-11 | 2011-01-14 |  |  |  |  | 0d |  |  |  |  |  | 主导 | 协助 | 《应用系统测试计划》 |  |  |  |
| 161 | 1.4.3.3.2.2 | 模拟测试方案编制和确认 | 1d | 2011-01-14 | 2011-01-17 | 160 |  |  |  | 0d |  |  |  |  |  | 主导 | 协助 | 《应用系统测试方案》 |  |  |  |
| 162 | 1.4.3.3.2.3 | 模拟测试环境和测试数据准备 | 3d | 2011-01-17 | 2011-01-20 | 161 |  |  |  | 133d |  |  |  |  |  | 主导 | 协助 |  |  |  |  |
| 163 | 1.4.3.3.2.4 | 模拟测试 | 21d | 2011-03-01 | 2011-03-21 |  |  |  |  | 74.5d | 0d | start no earlier than 2011-03-01 |  |  |  |  |  |  |  |  |  |
| 164 | 1.4.3.3.2.5 | 模拟测试总结评价 | 2d | 2011-03-22 | 2011-03-23 | 163 |  |  |  | 74.5d |  |  |  |  |  |  |  | 《系统模拟运行总结报告》 |  |  |  |
| 165 | 1.4.3.3.3 | **制定客户化标准操作手册** | 45d | 2011-01-17 | 2011-03-07 |  |  |  |  | 0d |  |  |  |  |  |  |  |  |  |  |  |
| 166 | 1.4.3.3.3.1 | 财务资金操作手册 | 30d | 2011-01-17 | 2011-02-20 | 161 |  |  |  | 0d |  | start no earlier than 2010-07-05 |  |  |  | 主导 | 协助 | 《最终用户操作手册》 |  |  |  |
| 167 | 1.4.3.3.3.2 | 供应链操作手册 | 15d | 2011-02-20 | 2011-03-07 | 166 |  |  |  | 0d |  |  |  |  |  | 主导 | 协助 | 《最终用户操作手册》 |  |  |  |
| 168 | 1.4.3.3.4 | 系统运行制度建设 | 1d | 2011-03-07 | 2011-03-08 | 167 |  |  |  | 0d |  |  |  |  |  | 主导 |  |  |  |  |  |

| ID | WBS | Task | Type | Duration | Start | Finish | Predecessors | Baseline start | Baseline finish | Baseline duration | Total slack | Free slack | Constraint | Resources | Work | Text1 | Text30 | Text2 | Text3 | Text22 | Text24 | Text28 | Text29 |
| --- | --- | --- | --- | --- | --- | --- | --- | --- | --- | --- | --- | --- | --- | --- | --- | --- | --- | --- | --- | --- | --- | --- | --- |
| 169 | 1.4.4 | **上线试运行** |  | 47d | 2011-03-08 | 2011-04-24 |  | 2007-08-27 | 2007-08-27 | 1d? | 0d |  |  |  | 536h |  |  |  |  |  |  |  |  |
| 170 | 1.4.4.1 | **切换准备** |  | 28d | 2011-03-08 | 2011-04-05 |  |  |  |  | 0d |  |  |  | 296h | 准备项目所需的基础档案,例如项目成本要素、各分公司在建项目信息等 | 准备系统所需的基础档案 |  |  |  |  |  |  |
| 171 | 1.4.4.1.1 | 生产环境配置检查 |  | 10d | 2011-03-08 | 2011-03-18 | 168 |  |  |  | 0d |  |  | 协助 | 80h |  |  | 协助 | 主导 | 主导 | 协助 |  |  |
| 172 | 1.4.4.1.2 | **最终用户培训** |  | 18d | 2011-03-18 | 2011-04-05 |  |  |  |  | 62d |  |  | 协助 | 216h |  |  | 协助 | 主导 | 主导 | 协助 |  |  |
| 173 | 1.4.4.1.2.1 | 培训计划制定 |  | 2d | 2011-03-18 | 2011-03-20 | 171 |  |  |  | 62d | 0d | start no earlier than 2010-09-08 | 协助 | 16h |  |  | 协助 | 主导 | 主导 | 协助 | 《权限规划及分配表》 | 《最终用户培训计划表》 |
| 174 | 1.4.4.1.2.2 | 培训资料准备 |  | 7d | 2011-03-20 | 2011-03-27 | 173 |  |  |  | 62d | 0d |  | 协助 | 56h |  |  | 协助 | 主导 | 主导 | 协助 | 《最终用户操作手册》 |  |
| 175 | 1.4.4.1.2.3 | 培训环境准备 |  | 1d | 2011-03-27 | 2011-03-28 | 174 |  |  |  | 62d | 0d | start no earlier than 2010-07-22 |  |  |  |  |  |  | 主导 | 协助 |  |  |
| 176 | 1.4.4.1.2.4 | 最终用户系统操作培训 |  | 7d | 2011-03-28 | 2011-04-04 | 175 |  |  |  | 62d | 0d |  |  |  |  |  |  |  | 主导 | 协助 |  |  |
| 177 | 1.4.4.1.2.5 | 培训考核 |  | 1d | 2011-04-04 | 2011-04-05 | 176 |  |  |  | 62d |  |  |  |  |  |  |  |  | 主导 | 协助 |  |  |
| 178 | 1.4.4.1.3 | **系统期初数据准备** |  | 2d | 2011-03-18 | 2011-03-20 |  |  |  |  | 0d |  |  |  |  |  |  |  |  |  |  |  |  |
| 179 | 1.4.4.1.3.1 | 系统期初数据准备计划 |  | 1d | 2011-03-18 | 2011-03-19 | 171 |  |  |  | 0d |  | start no earlier than 2010-07-25 |  |  |  |  |  |  | 主导 | 主导 |  | 《期初数据准备计划》 |
| 180 | 1.4.4.1.3.2 | 系统期初数据准备方案 |  | 1d | 2011-03-19 | 2011-03-20 | 179 |  |  |  | 0d |  |  |  |  |  |  |  |  | 主导 | 主导 |  | 《期初数据准备方案》 |
| 181 | 1.4.4.2 | **新系统试运行** |  | 20d | 2011-03-20 | 2011-04-09 |  | 2007-08-27 | 2007-08-27 | 1d? | 0d |  |  |  | 120h |  |  |  |  |  |  |  |  |
| 182 | 1.4.4.2.1 | 期初数据录入（导入） | milestone | 15d | 2011-03-20 | 2011-04-04 | 180 | 2007-11-12 | 2007-11-12 | 1d | 0d |  | start no earlier than 2011-01-01 | 协助 | 120h |  |  | 协助 | 主导 | 主导 | 协助 | 《最终用户培训计划表》 | 《期初数据确认报告》 |
| 183 | 1.4.4.2.2 | 期初数据检查确认 |  | 5d | 2011-04-04 | 2011-04-09 | 182 |  |  |  | 0d |  | start no earlier than 2010-08-11 |  |  |  |  |  |  | 主导 | 协助 |  |  |
| 184 | 1.4.4.3 | 新系统运行检查 | milestone | 15d | 2011-04-09 | 2011-04-24 | 183 | 2007-11-13 | 2007-11-13 | 1d | 0d |  | start no earlier than 2010-08-16 | 协助 | 120h |  |  | 协助 | 主导 | 主导 | 协助 |  | 《系统上线确认报告》 |
| 185 | 1.4.5 | **持续支持** |  | 40d | 2011-04-24 | 2011-06-16 |  |  |  |  | 0d |  |  | 协助 | 320h |  |  | 协助 | 主导 | 主导 | 协助 |  |  |
| 186 | 1.4.5.1 | 上线并行支持和第一个结帐月月结支持 |  | 30d | 2011-04-24 | 2011-06-02 | 184 |  |  |  | 0d |  | start no earlier than 2010-08-21 |  |  |  |  |  |  | 主导 | 协助 |  | 《月结确认报告》 |
| 187 | 1.4.5.2 | 项目实施效果总结 |  | 10d | 2011-06-02 | 2011-06-16 | 186 |  |  |  | 0d |  |  |  |  |  |  |  |  | 主导 | 协助 |  | 《阶段总结报告》 |
| 188 | 1.4.6 | **项目验收** |  | 3d | 2011-06-16 | 2011-06-21 |  | 2007-08-27 | 2007-08-27 | 1d? | 0d |  |  | 协助 | 24h |  |  | 协助 | 主导 | 协助 | 主导 | 《验收报告》 | 《验收报告》 |
| 189 | 1.4.6.1 | 项目验收计划 |  | 2d | 2011-06-16 | 2011-06-20 | 187 |  |  |  | 0d |  |  |  |  |  |  |  |  | 主导 | 协助 |  |  |
| 190 | 1.4.6.2 | 项目验收总结会 |  | 1d | 2011-06-20 | 2011-06-21 | 189 |  |  |  | 0d |  |  |  |  |  |  |  |  | 主导 | 协助 |  |  |
