# 项目管理实施主计划01

Schedule from MS Project, 2010-04-01 to 2011-03-28.
ZHYONG

## Calendars

- 标准: Mon-Fri 08:00-12:00, 13:00-17:00; Sat-Sun off. Exceptions (off unless hours are given): 2010-04-03 to 2010-04-04 08:00-12:00, 13:00-17:00, 2010-04-10 to 2010-04-11 08:00-12:00, 13:00-17:00, 2010-04-17 to 2010-04-18 08:00-12:00, 13:00-17:00, 2010-04-24 to 2010-04-25 08:00-12:00, 13:00-17:00, 2010-05-01 to 2010-05-04, 2010-05-08 to 2010-05-09 08:00-12:00, 13:00-17:00, 2010-05-15 to 2010-05-16 08:00-12:00, 13:00-17:00, 2010-05-22 to 2010-05-23 08:00-12:00, 13:00-17:00, 2010-05-29 to 2010-05-30 08:00-12:00, 13:00-17:00, 2010-06-05 to 2010-06-06 08:00-12:00, 13:00-17:00, 2010-06-12 to 2010-06-13 08:00-12:00, 13:00-17:00, 2010-06-19 to 2010-06-20 08:00-12:00, 13:00-17:00, 2010-06-26 to 2010-06-27 08:00-12:00, 13:00-17:00, 2010-07-03 to 2010-07-04 08:00-12:00, 13:00-17:00, 2010-07-10 to 2010-07-11 08:00-12:00, 13:00-17:00, 2010-07-17 to 2010-07-18 08:00-12:00, 13:00-17:00, 2010-07-24 to 2010-07-25 08:00-12:00, 13:00-17:00, 2010-07-31 to 2010-08-01 08:00-12:00, 13:00-17:00, 2010-08-07 to 2010-08-08 08:00-12:00, 13:00-17:00, 2010-08-14 to 2010-08-15 08:00-12:00, 13:00-17:00, 2010-08-21 to 2010-08-22 08:00-12:00, 13:00-17:00, 2010-08-25 08:00-12:00, 13:00-17:00, 2010-08-28 to 2010-08-29 08:00-12:00, 13:00-17:00, 2010-09-04 to 2010-09-05 08:00-12:00, 13:00-17:00, 2010-09-11 to 2010-09-12 08:00-12:00, 13:00-17:00, 2010-09-18 to 2010-09-19 08:00-12:00, 13:00-17:00, 2010-09-22 08:00-12:00, 13:00-17:00, 2010-09-25 to 2010-09-26 08:00-12:00, 13:00-17:00, 2010-10-01 to 2010-10-07, 2010-10-09 to 2010-10-10 08:00-12:00, 13:00-17:00, 2010-10-16 to 2010-10-17 08:00-12:00, 13:00-17:00, 2010-10-20 08:00-12:00, 13:00-17:00, 2010-10-23 to 2010-10-24 08:00-12:00, 13:00-17:00, 2010-10-30 to 2010-10-31 08:00-12:00, 13:00-17:00, 2010-11-06 to 2010-11-07 08:00-12:00, 13:00-17:00, 2010-11-13 to 2010-11-14 08:00-12:00, 13:00-17:00, 2010-11-20 to 2010-11-21 08:00-12:00, 13:00-17:00, 2010-11-24 08:00-12:00, 13:00-17:00, 2010-11-27 to 2010-11-28 08:00-12:00, 13:00-17:00, 2010-12-04 to 2010-12-05 08:00-12:00, 13:00-17:00, 2010-12-11 to 2010-12-12 08:00-12:00, 13:00-17:00, 2010-12-18 to 2010-12-19 08:00-12:00, 13:00-17:00, 2010-12-25 to 2010-12-26 08:00-12:00, 13:00-17:00, 2011-01-01 08:00-12:00, 13:00-17:00, 2011-02-05 to 2011-02-06 08:00-12:00, 13:00-17:00, 2011-02-12 to 2011-02-13 08:00-12:00, 13:00-17:00, 2011-02-19 to 2011-02-20 08:00-12:00, 13:00-17:00, 2011-02-26 to 2011-02-27 08:00-12:00, 13:00-17:00, 2011-03-05 to 2011-03-06 08:00-12:00, 13:00-17:00, 2011-03-12 to 2011-03-13 08:00-12:00, 13:00-17:00, 2011-03-19 to 2011-03-20 08:00-12:00, 13:00-17:00, 2011-03-26 to 2011-03-27 08:00-12:00, 13:00-17:00.

## Resources

| Resource |
| --- |
| 主导 |
| 协助 |

## Schedule

| ID | WBS | Task | Duration | Start | Finish | Predecessors | Total slack | Free slack | Constraint | Work | Text22 | Text24 | Text29 |
| --- | --- | --- | --- | --- | --- | --- | --- | --- | --- | --- | --- | --- | --- |
| 1 | 1 | **金意陶NC-ERP项目业务系统实施** | 342d? | 2010-04-01 | 2011-03-28 |  | -544.5d | 0d |  | 1120h |  |  |  |
| 2 | 1.1 | **项目启动** | 36d? | 2010-05-21 | 2010-06-25 |  | -590.5d | 0d |  |  |  |  |  |
| 3 | 1.1.1 | **项目启动准备** | 36d | 2010-05-21 | 2010-06-25 |  | 260d |  |  |  |  |  |  |
| 4 | 1.1.1.1 | 项目组织确定 | 1d | 2010-05-21 | 2010-05-21 |  | 295d |  | finish no earlier than 2010-05-21 |  | 主导 | 协助 | 《项目组织结构图》《项目组通讯录》 |
| 5 | 1.1.1.2 | **项目管理相关制度确定** | 2d | 2010-05-21 | 2010-05-22 |  | 294d |  |  |  | 协助 | 主导 |  |
| 6 | 1.1.1.2.1 | 项目文档管理制度 | 2d | 2010-05-21 | 2010-05-22 |  | 294d |  | start no earlier than 2010-05-21 |  | 协助 | 主导 | 《项目文档管理制度》 |
| 7 | 1.1.1.2.2 | 项目补丁管理制度 | 2d | 2010-05-21 | 2010-05-22 |  | 294d |  | start no earlier than 2010-05-21 |  | 协助 | 主导 | 《项目补丁管理制度》 |
| 8 | 1.1.1.2.3 | 项目问题管理制度 | 2d | 2010-05-21 | 2010-05-22 |  | 294d |  | start no earlier than 2010-05-21 |  | 协助 | 主导 | 《项目问题管理制度》 |
| 9 | 1.1.1.2.4 | 项目奖励方案 | 2d | 2010-05-21 | 2010-05-22 |  | 294d |  | start no earlier than 2010-05-21 |  | 协助 | 辅助 | 《项目奖励方案》 |
| 10 | 1.1.1.3 | 实施工作任务书确定 | 32d | 2010-05-25 | 2010-06-25 |  | 260d |  | start no earlier than 2010-05-25 |  | 协助 | 主导 | 《实施工作任务书》 |
| 11 | 1.1.2 | **项目实施主计划** | 3d | 2010-05-21 | 2010-05-23 |  | 293d |  |  |  |  |  |  |
| 12 | 1.1.2.1 | 项目实施主计划制定 | 2d | 2010-05-21 | 2010-05-22 |  | 293d | 0d | start no earlier than 2010-05-21 |  | 协助 | 主导 |  |
| 13 | 1.1.2.2 | 项目主计划确定 | 1d | 2010-05-23 | 2010-05-23 | 12 | 293d |  |  |  | 协助 | 主导 | 《项目实施主计划》 |
| 14 | 1.1.3 | **项目启动会** | 10d? | 2010-05-21 | 2010-05-30 |  | -592.5d | 0d |  |  | 主导 | 协助 |  |
| 15 | 1.1.3.1 | 启动会会务组织 | 4d | 2010-05-21 | 2010-05-24 |  | -586.5d | 0d | start no earlier than 2010-05-21 |  |  |  |  |
| 16 | 1.1.3.2 | **启动会文件准备** | 3d | 2010-05-21 | 2010-05-23 |  | -590.5d | 0d |  |  |  |  |  |
| 17 | 1.1.3.2.1 | 启动会主持人PPT | 3d | 2010-05-21 | 2010-05-23 |  | -590.5d | 0d | start no earlier than 2010-05-21 |  |  |  |  |
| 18 | 1.1.3.2.2 | 启动会项目经理PPT | 3d | 2010-05-21 | 2010-05-23 |  | -590.5d | 0d | start no earlier than 2010-05-21 |  |  |  |  |
| 19 | 1.1.3.3 | 启动会 | 0.5d | 2010-05-26 | 2010-05-26 | 16 | -592.5d | 0d | start no earlier than 2010-05-26 |  |  |  |  |
| 20 | 1.1.3.4 | 项目组实施工作准备会 | 0.5d | 2010-05-26 | 2010-05-26 | 19 | -592.5d | 0d |  |  |  |  |  |
| 21 | 1.1.3.5 | 实施工作任务书讨论确定 | 3d | 2010-05-27 | 2010-05-29 | 20 | -592.5d | 0d |  |  |  |  |  |
| 22 | 1.1.3.6 | 项目组项目管理制度宣贯及实施工具内部培训 | 1d? | 2010-05-30 | 2010-05-30 | 21 | -592.5d | 0d |  |  |  |  |  |
| 23 | 1.2 | **OA系统实施** | 49d? | 2010-06-01 | 2010-07-19 | 14 | -593.5d | 0d |  |  |  |  |  |
| 24 | 1.2.1 | 需求调研 | 7d | 2010-06-01 | 2010-06-07 |  | -593.5d | 0d | start no earlier than 2010-06-01 |  |  |  |  |
| 25 | 1.2.2 | 应用系统设计，流程规划 | 20d | 2010-06-08 | 2010-06-27 | 24 | -593.5d | 0d |  |  |  |  |  |
| 26 | 1.2.3 | 应用系统安装 | 1d? | 2010-06-28 | 2010-06-28 | 25 | -593.5d | 0d |  |  |  |  |  |
| 27 | 1.2.4 | 应用系统配置 | 3d | 2010-06-29 | 2010-07-01 | 26 | -593.5d | 0d |  |  |  |  |  |
| 28 | 1.2.5 | 应用方案测试 | 10d | 2010-07-02 | 2010-07-11 | 27 | -593.5d | 0d |  |  |  |  |  |
| 29 | 1.2.6 | 应用方案确认 | 3d | 2010-07-12 | 2010-07-14 | 28 | -593.5d | 0d |  |  |  |  |  |
| 30 | 1.2.7 | 应用系统培训 | 3d | 2010-07-15 | 2010-07-17 | 29 | -593.5d | 0d |  |  |  |  |  |
| 31 | 1.2.8 | 系统上线切换 | 1d? | 2010-07-18 | 2010-07-18 | 30 | -593.5d | 0d |  |  |  |  |  |
| 32 | 1.2.9 | OA系统验收 | 1d? | 2010-07-19 | 2010-07-19 | 31 | -593.5d | 0d |  |  |  |  |  |

| ID | WBS | Task | Duration | Start | Finish | Predecessors | Baseline start | Baseline finish | Baseline duration | Total slack | Free slack | Constraint | Work | Text29 | Text2 | Text3 | Text22 | Text24 |
| --- | --- | --- | --- | --- | --- | --- | --- | --- | --- | --- | --- | --- | --- | --- | --- | --- | --- | --- |
| 33 | 1.3 | **财务供应链系统实施** | 342d? | 2010-04-01 | 2011-03-28 |  |  |  |  | -487.5d | 0d |  | 1120h |  |  |  |  |  |
| 34 | 1.3.1 | **需求调研** | 18d? | 2010-09-01 | 2010-09-19 |  | 2007-08-27 | 2007-08-27 | 1d? | -636.5d | 0d |  |  |  |  |  |  |  |
| 35 | 1.3.1.1 | 业务系统调研计划编制和确定 | 2d | 2010-09-01 | 2010-09-03 | 95 |  |  |  | -636.5d | 0d | start no earlier than 2010-04-07 |  | 《业务调研计划》 |  |  |  |  |
| 36 | 1.3.1.2 | **佛山地区** | 9d | 2010-09-03 | 2010-09-12 | 35 |  |  |  | -636.5d | 0d |  |  |  |  |  |  |  |
| 37 | 1.3.1.2.1 | **财务模块调研** | 6d | 2010-09-03 | 2010-09-09 |  | 2007-08-27 | 2007-08-27 | 1d? | -636.5d | 0d |  |  | 《调研提纲》 | 协助 | 主导 | 协助 | 主导 |
| 38 | 1.3.1.2.1.1 | 总帐 | 2d | 2010-09-03 | 2010-09-05 |  |  |  |  | -636.5d | 0d |  |  |  |  |  |  |  |
| 39 | 1.3.1.2.1.2 | 收付 | 2d | 2010-09-05 | 2010-09-07 | 38 |  |  |  | -636.5d | 0d |  |  |  |  |  |  |  |
| 40 | 1.3.1.2.1.3 | 资金 | 2d | 2010-09-07 | 2010-09-09 | 39 |  |  |  | -636.5d | 0d |  |  |  |  |  |  |  |
| 41 | 1.3.1.2.1.4 | 成本 | 2d | 2010-09-03 | 2010-09-05 |  |  |  |  | 185.5d |  |  |  |  |  |  |  |  |
| 42 | 1.3.1.2.2 | **供应链模块调研** | 3d | 2010-09-09 | 2010-09-12 | 40 |  |  |  | -636.5d | 0d |  |  | 《调研提纲》 |  |  | 协助 | 主导 |
| 43 | 1.3.1.2.2.1 | 采购业务 | 2d | 2010-09-09 | 2010-09-11 |  |  |  |  | -635.5d | 0d |  |  |  |  |  |  |  |
| 44 | 1.3.1.2.2.2 | 库存业务 | 2d | 2010-09-09 | 2010-09-11 |  |  |  |  | -635.5d | 0d |  |  |  |  |  |  |  |
| 45 | 1.3.1.2.2.3 | 销售业务 | 3d | 2010-09-09 | 2010-09-12 |  |  |  |  | -636.5d | 0d |  |  |  |  |  |  |  |
| 46 | 1.3.1.3 | **景德镇地区** | 3d? | 2010-09-12 | 2010-09-15 | 36 |  |  |  | 178.5d |  |  |  |  |  |  |  |  |
| 47 | 1.3.1.3.1 | **财务模块调研** | 3d? | 2010-09-12 | 2010-09-15 |  |  |  |  | 178.5d |  |  |  |  |  |  |  |  |
| 48 | 1.3.1.3.1.1 | 总帐 | 1d? | 2010-09-12 | 2010-09-13 |  |  |  |  | 178.5d | 0d |  |  |  |  |  |  |  |
| 49 | 1.3.1.3.1.2 | 收付 | 1d? | 2010-09-13 | 2010-09-14 | 48 |  |  |  | 178.5d | 0d |  |  |  |  |  |  |  |
| 50 | 1.3.1.3.1.3 | 资金 | 1d? | 2010-09-14 | 2010-09-15 | 49 |  |  |  | 178.5d |  |  |  |  |  |  |  |  |
| 51 | 1.3.1.3.1.4 | **供应链模块调研** | 1d? | 2010-09-12 | 2010-09-13 |  |  |  |  | 180.5d |  |  |  | 《调研提纲》 |  |  | 协助 | 主导 |
| 52 | 1.3.1.3.1.4.1 | 采购业务 | 1d? | 2010-09-12 | 2010-09-13 |  |  |  |  | 180.5d |  |  |  |  |  |  |  |  |
| 53 | 1.3.1.3.1.4.2 | 库存业务 | 1d? | 2010-09-12 | 2010-09-13 |  |  |  |  | 180.5d |  |  |  |  |  |  |  |  |
| 54 | 1.3.1.3.1.4.3 | 销售业务 | 1d? | 2010-09-12 | 2010-09-13 |  |  |  |  | 180.5d |  |  |  |  |  |  |  |  |
| 55 | 1.3.1.4 | 需求调研补充及问题反馈 | 7d | 2010-09-12 | 2010-09-19 | 42 |  |  |  | -636.5d | 0d |  |  |  |  |  |  |  |
| 56 | 1.3.2 | **蓝图设计** | 76d | 2010-09-19 | 2010-12-11 | 55 | 2007-08-27 | 2007-08-27 | 1d? | -636.5d | 0d |  | 168h |  |  |  |  |  |
| 57 | 1.3.2.1 | **培训测试系统安装配置** | 2d | 2010-09-19 | 2010-09-21 |  |  |  |  | -636.5d | 0d |  |  |  |  |  |  |  |
| 58 | 1.3.2.1.1 | 测试环境准备（硬件、网络） | 1d | 2010-09-19 | 2010-09-20 |  |  |  |  | -636.5d | 0d | start no earlier than 2010-04-14 |  |  |  |  | 主导 | 协助 |
| 59 | 1.3.2.1.2 | 测试环境安装配置 | 0.5d | 2010-09-20 | 2010-09-20 | 58 |  |  |  | -636.5d | 0d |  |  |  |  |  | 协助 | 主导 |
| 60 | 1.3.2.1.3 | 实施工具安装配置 | 0.5d | 2010-09-21 | 2010-09-21 | 59 |  |  |  | -636.5d | 0d | start no earlier than 2010-04-16 |  |  |  |  | 协助 | 主导 |

| ID | WBS | Task | Type | Duration | Start | Finish | Predecessors | Baseline start | Baseline finish | Baseline duration | Total slack | Free slack | Constraint | Resources | Work | Text22 | Text24 | Text29 | Text2 | Text3 |
| --- | --- | --- | --- | --- | --- | --- | --- | --- | --- | --- | --- | --- | --- | --- | --- | --- | --- | --- | --- | --- |
| 61 | 1.3.2.2 | **关键用户培训** |  | 30d | 2010-09-21 | 2010-10-28 | 60 | 2007-08-27 | 2007-08-27 | 1d? | -636.5d | 0d |  |  | 168h |  |  |  |  |  |
| 62 | 1.3.2.2.1 | **培训准备** |  | 8d | 2010-09-21 | 2010-09-29 |  |  |  |  | -636.5d | 0d |  |  |  |  |  |  |  |  |
| 63 | 1.3.2.2.1.1 | 制定和确认培训计划 |  | 1d | 2010-09-21 | 2010-09-22 | 58 |  |  |  | -636.5d | 0d |  |  |  | 协助 | 主导 | 《关键用户培训计划》 |  |  |
| 64 | 1.3.2.2.1.2 | 培训资料和系统环境料准备 |  | 7d | 2010-09-22 | 2010-09-29 | 63 |  |  |  | 164.5d |  |  |  |  | 协助 | 主导 |  |  |  |
| 65 | 1.3.2.2.1.3 | 培训环境准备（场地、设备、网络调试） |  | 3d | 2010-09-22 | 2010-09-25 | 63 |  |  |  | -636.5d | 0d |  |  |  | 主导 | 协助 |  |  |  |
| 66 | 1.3.2.2.2 | **应用系统培训** |  | 20d | 2010-09-25 | 2010-10-22 | 65 | 2007-09-18 | 2007-09-18 | 1d | -636.5d | 0d |  | 主导 | 168h | 协助 | 主导 | 《培训确认单》 | 主导 | 协助 |
| 67 | 1.3.2.2.2.1 | UAP培训 |  | 2d | 2010-09-25 | 2010-09-27 | 63 |  |  |  | -636.5d | 0d |  |  |  | 协助 | 主导 |  |  |  |
| 68 | 1.3.2.2.2.2 | 供应链系统培训 |  | 10d | 2010-09-27 | 2010-10-14 | 67 |  |  |  | -636.5d | 0d |  |  |  | 协助 | 主导 |  |  |  |
| 69 | 1.3.2.2.2.3 | 财务系统培训 |  | 7d | 2010-10-14 | 2010-10-21 | 68 |  |  |  | -636.5d | 0d |  |  |  | 协助 | 主导 |  |  |  |
| 70 | 1.3.2.2.2.4 | 培训考核 |  | 1d | 2010-10-21 | 2010-10-22 | 69 |  |  |  | -636.5d | 0d |  | 主导 | 8h | 协助 | 主导 | 《培训记录》 | 主导 | 协助 |
| 71 | 1.3.2.2.3 | **实施工具培训** |  | 2d | 2010-10-22 | 2010-10-24 |  |  |  |  | -636.5d | 0d |  |  |  |  |  |  |  |  |
| 72 | 1.3.2.2.3.1 | 实施工具培训（问题管理系统） |  | 0.5d | 2010-10-22 | 2010-10-22 | 70 |  |  |  | -636.5d | 0d |  |  |  | 协助 | 主导 |  |  |  |
| 73 | 1.3.2.2.3.2 | 实施工具培训（补丁管理） |  | 0.5d | 2010-10-23 | 2010-10-23 | 72 |  |  |  | -636.5d | 0d | start no earlier than 2010-04-22 |  |  | 协助 | 主导 |  |  |  |
| 74 | 1.3.2.2.3.3 | 业务流程图绘制培训 |  | 1d | 2010-10-23 | 2010-10-24 | 73 |  |  |  | -636.5d | 0d | start no earlier than 2010-04-23 |  |  | 协助 | 主导 |  |  |  |
| 75 | 1.3.2.2.4 | **系统管理员培训（应用系统维护和设置）** |  | 4d | 2010-10-24 | 2010-10-28 |  |  |  |  | -636.5d | 0d |  |  |  |  |  |  |  |  |
| 76 | 1.3.2.2.4.1 | 应用系统维护（配置、启动、备份等） |  | 2d | 2010-10-24 | 2010-10-26 | 74 |  |  |  | -636.5d | 0d | start no earlier than 2010-04-18 |  |  | 协助 | 主导 |  |  |  |
| 77 | 1.3.2.2.4.2 | 系统管理（权限、模板、参数等） |  | 2d | 2010-10-26 | 2010-10-28 | 76 |  |  |  | -636.5d | 0d |  |  |  | 协助 | 主导 |  |  |  |
| 78 | 1.3.2.3 | **需求分析和蓝图设计** |  | 39d | 2010-10-28 | 2010-12-06 |  |  |  |  | -636.5d | 0d |  |  |  |  |  |  |  |  |
| 79 | 1.3.2.3.1 | 需求调研分析和蓝图设计方案编制 |  | 21d | 2010-10-28 | 2010-11-18 | 77 |  |  |  | -636.5d | 0d | start no earlier than 2010-04-20 |  |  |  | 主导 |  |  |  |
| 80 | 1.3.2.3.2 | 业务蓝图可行性验证测试 |  | 17d | 2010-11-18 | 2010-12-05 | 79 |  |  |  | -636.5d | 0d | start no earlier than 2010-05-09 |  |  | 协助 | 主导 |  |  |  |
| 81 | 1.3.2.3.3 | 需求分析和蓝图设计方案确认 | milestone | 1d | 2010-12-05 | 2010-12-06 | 80 |  |  |  | 96.5d | 0d | finish no earlier than 2010-05-26 |  |  | 协助 | 主导 | 《需求分析和业务蓝图》《系统应用配置方案》 |  |  |
| 82 | 1.3.2.4 | 二次开发需求分析确认 |  | 5d | 2010-12-06 | 2010-12-11 | 81 |  |  |  | 96.5d | 0d | start no earlier than 2010-05-27 |  |  | 协助 | 主导 |  |  |  |
| 83 | 1.3.3 | **系统建设** |  | 278.5d | 2010-04-01 | 2011-01-20 |  |  |  |  | -487.5d | 0d |  |  | 72h |  |  |  |  |  |
| 84 | 1.3.3.1 | **生产环境安装** |  | 2d | 2010-12-11 | 2010-12-13 |  |  |  |  | 96.5d |  |  |  |  |  |  |  |  |  |
| 85 | 1.3.3.1.1 | 生产环境准备（硬件） |  | 1d | 2010-12-11 | 2010-12-12 | 82 |  |  |  | 96.5d | 0d |  |  |  | 主导 | 协助 |  |  |  |
| 86 | 1.3.3.1.2 | 产品交付及生产环境安装 |  | 1d | 2010-12-12 | 2010-12-13 | 85 |  |  |  | 96.5d |  |  |  |  | 协助 | 主导 | 《产品安装确认书》 |  |  |

| ID | WBS | Task | Duration | Start | Finish | Predecessors | Baseline start | Baseline finish | Baseline duration | Total slack | Free slack | Constraint | Deadline | Resources | Work | Text2 | Text3 | Text22 | Text24 | Text28 | Text29 | Text1 | Text30 |
| --- | --- | --- | --- | --- | --- | --- | --- | --- | --- | --- | --- | --- | --- | --- | --- | --- | --- | --- | --- | --- | --- | --- | --- |
| 87 | 1.3.3.2 | **基础数据准备（静态数据）** | 34d | 2010-12-05 | 2011-01-11 |  |  |  |  | -636.5d | 0d |  |  |  | 16h |  |  |  |  |  |  |  |  |
| 88 | 1.3.3.2.1 | 基础数据准备计划制定 | 2d | 2010-12-05 | 2010-12-07 | 80 |  |  |  | -636.5d | 0d | start no earlier than 2010-06-03 |  | 主导 | 16h | 主导 | 协助 | 协助 | 主导 | 《系统解决方案初稿》 | 《基础数据准备计划》 |  |  |
| 89 | 1.3.3.2.2 | 基础数据准备方案制定 | 1d | 2010-12-07 | 2010-12-08 | 88 |  |  |  | -636.5d | 0d |  |  |  |  |  |  | 协助 | 主导 |  | 《基础数据准备方案》 |  |  |
| 90 | 1.3.3.2.3 | 基础数据录入和校验 | 30d | 2010-12-08 | 2011-01-10 | 89 |  |  |  | -636.5d | 0d |  |  |  |  |  |  | 主导 | 协助 |  |  |  |  |
| 91 | 1.3.3.2.4 | 基础数据确认 | 1d | 2011-01-10 | 2011-01-11 | 90 | 2007-08-27 | 2007-08-27 | 1d? | -636.5d | 0d | start no earlier than 2010-06-05 | 2008-11-17 |  |  |  |  | 主导 | 协助 |  | 《基础数据确认报告》 |  |  |
| 92 | 1.3.3.3 | **应用系统配置** | 7d | 2011-01-11 | 2011-01-20 | 91 |  |  |  | 63.5d |  |  |  | 协助 | 56h | 协助 | 主导 | 主导 | 协助 | 《系统解决方案》 | 《系统应用配置方案》 |  |  |
| 93 | 1.3.3.3.1 | **系统配置** | 7d | 2011-01-11 | 2011-01-20 |  |  |  |  | 63.5d |  |  |  |  |  |  |  |  |  |  |  |  |  |
| 94 | 1.3.3.3.1.1 | 应用系统参数及流程配置 | 7d | 2011-01-11 | 2011-01-20 |  |  |  |  | 63.5d |  |  |  |  |  |  |  |  |  |  |  |  |  |
| 95 | 1.3.3.4 | 企业高层调研 | 0.5d | 2010-09-01 | 2010-09-01 | 23 |  |  |  | -636.5d | 0d | start no earlier than 2010-09-01 |  |  |  |  |  |  |  |  |  |  |  |
| 96 | 1.3.3.5 | 单据模板配置 | 21d | 2010-04-01 | 2010-04-21 |  |  |  |  | 321d |  |  |  |  |  |  |  |  |  |  |  |  |  |
| 97 | 1.3.3.6 | 打印模板配置 | 30d | 2010-04-01 | 2010-04-30 |  |  |  |  | 312d |  |  |  |  |  |  |  |  |  |  |  |  |  |
| 98 | 1.3.3.7 | 系统报表配置（含开发） | 30d | 2010-04-01 | 2010-04-30 |  |  |  |  | 312d |  |  |  |  |  |  |  |  |  |  |  |  |  |
| 99 | 1.3.3.8 | 系统查询模板配置 | 30d | 2010-04-01 | 2010-04-30 |  |  |  |  | 312d |  |  |  |  |  |  |  |  |  |  |  |  |  |
| 100 | 1.3.4 | **业务流程模拟测试** | 7d | 2010-04-01 | 2010-04-07 |  |  |  |  | 292d |  |  |  |  |  |  |  |  |  |  |  |  |  |
| 101 | 1.3.4.1 | 模拟测试计划编制和确认 | 3d | 2010-04-01 | 2010-04-03 |  |  |  |  | 292d | 0d |  |  |  |  |  |  | 主导 | 协助 |  | 《应用系统测试计划》 |  |  |
| 102 | 1.3.4.2 | 模拟测试方案编制和确认 | 1d | 2010-04-04 | 2010-04-04 | 101 |  |  |  | 292d | 0d |  |  |  |  |  |  | 主导 | 协助 |  | 《应用系统测试方案》 |  |  |
| 103 | 1.3.4.3 | 模拟测试环境和测试数据准备 | 3d | 2010-04-05 | 2010-04-07 | 102 |  |  |  | 335d |  |  |  |  |  |  |  | 主导 | 协助 |  |  |  |  |
| 104 | 1.3.4.4 | 模拟测试总结评价 | 2d | 2010-04-01 | 2010-04-02 |  |  |  |  | 340d |  |  |  |  |  |  |  |  |  |  | 《系统模拟运行总结报告》 |  |  |
| 105 | 1.3.5 | **制定客户化标准操作手册** | 45d | 2010-07-05 | 2010-08-18 |  |  |  |  | 205d |  |  |  |  |  |  |  |  |  |  |  |  |  |
| 106 | 1.3.5.1 | 财务资金操作手册 | 30d | 2010-07-05 | 2010-08-03 | 102 |  |  |  | 205d | 0d | start no earlier than 2010-07-05 |  |  |  |  |  | 主导 | 协助 |  | 《最终用户操作手册》 |  |  |
| 107 | 1.3.5.2 | 供应链操作手册 | 15d | 2010-08-04 | 2010-08-18 | 106 |  |  |  | 205d | 0d |  |  |  |  |  |  | 主导 | 协助 |  | 《最终用户操作手册》 |  |  |
| 108 | 1.3.6 | 系统运行制度建设 | 1d | 2010-08-19 | 2010-08-19 | 107 |  |  |  | 205d |  |  |  |  |  |  |  | 主导 |  |  |  |  |  |
| 109 | 1.3.7 | **上线试运行** | 299d | 2010-04-01 | 2011-02-13 |  | 2007-08-27 | 2007-08-27 | 1d? | 43d |  |  |  |  | 536h |  |  |  |  |  |  |  |  |
| 110 | 1.3.7.1 | **切换准备** | 174d | 2010-04-01 | 2010-09-25 |  |  |  |  | 168d |  |  |  |  | 296h |  |  |  |  |  |  | 准备项目所需的基础档案,例如项目成本要素、各分公司在建项目信息等 | 准备系统所需的基础档案 |
| 111 | 1.3.7.1.1 | 生产环境配置检查 | 10d | 2010-04-01 | 2010-04-10 |  |  |  |  | 332d |  |  |  |  | 80h | 协助 | 主导 | 主导 | 协助 |  |  |  |  |

| ID | WBS | Task | Type | Duration | Start | Finish | Predecessors | Baseline start | Baseline finish | Baseline duration | Total slack | Free slack | Constraint | Resources | Work | Text2 | Text3 | Text22 | Text24 | Text28 | Text29 |
| --- | --- | --- | --- | --- | --- | --- | --- | --- | --- | --- | --- | --- | --- | --- | --- | --- | --- | --- | --- | --- | --- |
| 112 | 1.3.7.1.2 | **最终用户培训** |  | 18d | 2010-09-08 | 2010-09-25 |  |  |  |  | 168d |  |  | 协助 | 216h | 协助 | 主导 | 主导 | 协助 |  |  |
| 113 | 1.3.7.1.2.1 | 培训计划制定 |  | 2d | 2010-09-08 | 2010-09-09 |  |  |  |  | 168d | 0d | start no earlier than 2010-09-08 | 协助 | 16h | 协助 | 主导 | 主导 | 协助 | 《权限规划及分配表》 | 《最终用户培训计划表》 |
| 114 | 1.3.7.1.2.2 | 培训资料准备 |  | 7d | 2010-09-10 | 2010-09-16 | 113 |  |  |  | 168d | 0d |  | 协助 | 56h | 协助 | 主导 | 主导 | 协助 | 《最终用户操作手册》 |  |
| 115 | 1.3.7.1.2.3 | 培训环境准备 |  | 1d | 2010-09-17 | 2010-09-17 | 114 |  |  |  | 168d | 0d | start no earlier than 2010-07-22 |  |  |  |  | 主导 | 协助 |  |  |
| 116 | 1.3.7.1.2.4 | 最终用户系统操作培训 |  | 7d | 2010-09-18 | 2010-09-24 | 115 |  |  |  | 168d | 0d |  |  |  |  |  | 主导 | 协助 |  |  |
| 117 | 1.3.7.1.2.5 | 培训考核 |  | 1d | 2010-09-25 | 2010-09-25 | 116 |  |  |  | 168d |  |  |  |  |  |  | 主导 | 协助 |  |  |
| 118 | 1.3.7.1.3 | **系统期初数据准备** |  | 2d | 2010-07-25 | 2010-07-26 |  |  |  |  | 151d |  |  |  |  |  |  |  |  |  |  |
| 119 | 1.3.7.1.3.1 | 系统期初数据准备计划 |  | 1d | 2010-07-25 | 2010-07-25 |  |  |  |  | 151d | 0d | start no earlier than 2010-07-25 |  |  |  |  | 主导 | 主导 |  | 《期初数据准备计划》 |
| 120 | 1.3.7.1.3.2 | 系统期初数据准备方案 |  | 1d | 2010-07-26 | 2010-07-26 | 119 |  |  |  | 151d |  |  |  |  |  |  | 主导 | 主导 |  | 《期初数据准备方案》 |
| 121 | 1.3.7.2 | **新系统试运行** |  | 20d | 2011-01-01 | 2011-01-27 |  | 2007-08-27 | 2007-08-27 | 1d? | 0d |  |  |  | 120h |  |  |  |  |  |  |
| 122 | 1.3.7.2.1 | 期初数据录入（导入） | milestone | 15d | 2011-01-01 | 2011-01-20 | 120 | 2007-11-12 | 2007-11-12 | 1d | 0d |  | start no earlier than 2011-01-01 | 协助 | 120h | 协助 | 主导 | 主导 | 协助 | 《最终用户培训计划表》 | 《期初数据确认报告》 |
| 123 | 1.3.7.2.2 | 期初数据检查确认 |  | 5d | 2011-01-21 | 2011-01-27 | 122 |  |  |  | 0d |  | start no earlier than 2010-08-11 |  |  |  |  | 主导 | 协助 |  |  |
| 124 | 1.3.7.3 | 新系统运行检查 | milestone | 15d | 2011-01-28 | 2011-02-13 | 123 | 2007-11-13 | 2007-11-13 | 1d | 0d |  | start no earlier than 2010-08-16 | 协助 | 120h | 协助 | 主导 | 主导 | 协助 |  | 《系统上线确认报告》 |
| 125 | 1.3.8 | **持续支持** |  | 40d | 2011-02-14 | 2011-03-25 |  |  |  |  | 0d |  |  | 协助 | 320h | 协助 | 主导 | 主导 | 协助 |  |  |
| 126 | 1.3.8.1 | 上线并行支持和第一个结帐月月结支持 |  | 30d | 2011-02-14 | 2011-03-15 | 124 |  |  |  | 0d |  | start no earlier than 2010-08-21 |  |  |  |  | 主导 | 协助 |  | 《月结确认报告》 |
| 127 | 1.3.8.2 | 项目实施效果总结 |  | 10d | 2011-03-16 | 2011-03-25 | 126 |  |  |  | 0d |  |  |  |  |  |  | 主导 | 协助 |  | 《阶段总结报告》 |
| 128 | 1.3.9 | **项目验收** |  | 3d | 2011-03-26 | 2011-03-28 |  | 2007-08-27 | 2007-08-27 | 1d? | 0d |  |  | 协助 | 24h | 协助 | 主导 | 协助 | 主导 | 《验收报告》 | 《验收报告》 |
| 129 | 1.3.9.1 | 项目验收计划 |  | 2d | 2011-03-26 | 2011-03-27 | 127 |  |  |  | 0d |  |  |  |  |  |  | 主导 | 协助 |  |  |
| 130 | 1.3.9.2 | 项目验收总结会 |  | 1d | 2011-03-28 | 2011-03-28 | 129 |  |  |  | 0d |  |  |  |  |  |  | 主导 | 协助 |  |  |
