# PM-0101金意陶OA系统实施主计划

Schedule from MS Project, 2010-05-25 to 2010-08-24.
tyl

## Calendars

- 标准: Mon-Fri 08:00-12:00, 13:00-17:00; Sat-Sun off.

## Schedule

| ID | WBS | Task | Type | Duration | Start | Finish | Predecessors | Total slack | Free slack | Constraint | Text4 | Text28 | Text29 |
| --- | --- | --- | --- | --- | --- | --- | --- | --- | --- | --- | --- | --- | --- |
| 1 | 1 | **项目启动** |  | 6d? | 2010-05-25 | 2010-06-01 |  | 60d |  |  | 项目组成员 | 项目组成员 |  |
| 2 | 1.1 | 项目内部交接 |  | 1d? | 2010-05-25 | 2010-05-25 |  | 65d |  |  | 项目组成员 | 项目组成员 |  |
| 3 | 1.2 | 确定项目组成员 |  | 1d? | 2010-05-25 | 2010-05-25 |  | 65d |  |  | 项目组成员 | 项目组成员 |  |
| 4 | 1.3 | 确认软硬件环境 |  | 1d? | 2010-05-25 | 2010-05-25 |  | 65d |  |  | 项目组成员 | 项目组成员 |  |
| 5 | 1.4 | 召开项目启动会 |  | 1d? | 2010-05-25 | 2010-05-25 |  | 65d |  |  | 项目组成员 | 项目组成员 |  |
| 6 | 1.5 | 确认实施计划 |  | 1d? | 2010-06-01 | 2010-06-01 |  | 60d |  | start no earlier than 2010-06-01 | 项目组成员 | 项目组成员 | 《项目实施主计划》 |
| 7 | 2 | **产品安装** |  | 4d? | 2010-06-01 | 2010-06-04 |  | 57d |  |  | 系统管理员 | 项目组成员 |  |
| 8 | 2.1 | 产品安装 |  | 1d? | 2010-06-01 | 2010-06-01 |  | 59d | 1d | start no earlier than 2010-06-01 | 系统管理员 | 项目组成员 |  |
| 9 | 2.2 | 标准产品培训计划制定 |  | 1d? | 2010-06-02 | 2010-06-02 | 8SS | 58d | 0d | start no earlier than 2010-06-02 |  | 实施顾问 | 《标准产品培训计划》 |
| 10 | 2.3 | 培训环境准备 |  | 1d? | 2010-06-02 | 2010-06-02 | 9SS | 58d | 1d |  |  | 实施顾问 |  |
| 11 | 2.4 | 项目组产品培训 |  | 1d? | 2010-06-04 | 2010-06-04 | 10 | 57d |  | finish no earlier than 2010-06-04 | 系统管理员 | 实施顾问 |  |
| 12 | 3 | **需求调研** |  | 17d? | 2010-06-03 | 2010-06-25 |  | 0d |  |  | 关键用户/系统管理员 | 实施顾问 |  |
| 13 | 3.1 | **基础数据准备** |  | 1d? | 2010-06-03 | 2010-06-03 |  | 0d |  |  | 关键用户/系统管理员 | 实施顾问 |  |
| 14 | 3.1.1 | 组织架构 |  | 1d? | 2010-06-03 | 2010-06-03 |  | 0d |  | start no earlier than 2010-06-03 | 项目组成员 |  |  |
| 15 | 3.1.2 | 人员信息维护 |  | 1d? | 2010-06-03 | 2010-06-03 | 14SS | 0d |  |  | 项目组成员 |  |  |
| 16 | 3.2 | 业务需求调研计划制定 |  | 1d? | 2010-06-04 | 2010-06-04 | 15 | 0d |  |  |  | 实施顾问 | 《业务需求调研计划》 |
| 17 | 3.3 | 业务需求调研 |  | 11d? | 2010-06-07 | 2010-06-21 | 16 | 0d |  | finish no earlier than 2010-06-21 | 关键用户/系统管理员 | 实施顾问 |  |
| 18 | 3.4 | 需求调研报告编制 |  | 2d | 2010-06-22 | 2010-06-23 | 17 | 0d |  |  |  |  |  |
| 19 | 3.5 | 需求调研确认 | milestone | 2d? | 2010-06-24 | 2010-06-25 | 18 | 0d |  | finish no earlier than 2010-06-23 | 关键用户/系统管理员 | 实施顾问 | 《需求调研报告》 |
| 20 | 4 | **系统建设** |  | 27d? | 2010-06-28 | 2010-08-03 |  | 0d |  |  | 关键用户/系统管理员 | 实施顾问 |  |
| 21 | 4.1 | 系统管理员培训 |  | 1d? | 2010-06-28 | 2010-06-28 | 19 | 0d |  |  | 系统管理员 | 项目组成员 |  |
| 22 | 4.2 | 系统建设方案制定 |  | 1d? | 2010-06-29 | 2010-06-29 | 21 | 0d |  |  | 系统管理员 | 实施顾问 | 《系统建设方案》 |
| 23 | 4.3 | 组织建设 |  | 11d? | 2010-06-30 | 2010-07-14 | 22 | 0d |  | finish no earlier than 2010-07-07 | 关键用户/系统管理员 | 实施顾问 |  |
| 24 | 4.4 | 应用构建 |  | 11d? | 2010-07-15 | 2010-07-29 | 23 | 0d |  | finish no earlier than 2010-07-07 | 关键用户/系统管理员 | 实施顾问 |  |
| 25 | 4.5 | 系统建设确认 | milestone | 3d? | 2010-07-30 | 2010-08-03 | 24 | 0d |  | finish no earlier than 2010-07-09 | 关键用户/系统管理员/项目经理 | 实施顾问/项目经理 | 《系统建设确认单》 |

| ID | WBS | Task | Type | Duration | Start | Finish | Predecessors | Total slack | Constraint | Text4 | Text28 | Text29 |
| --- | --- | --- | --- | --- | --- | --- | --- | --- | --- | --- | --- | --- |
| 26 | 5 | **用户培训** |  | 6d? | 2010-08-04 | 2010-08-11 |  | 0d |  | 项目组成员/公司领导/终端用户 | 实施顾问/项目经理 |  |
| 27 | 5.1 | 终端用户培训计划制定 |  | 1d? | 2010-08-04 | 2010-08-04 | 25 | 0d |  |  |  | 《终端用户培训计划》 |
| 28 | 5.2 | 终端用户培训 |  | 4d? | 2010-08-05 | 2010-08-10 | 27 | 0d | finish no earlier than 2010-07-15 | 项目组成员/公司领导/终端用户 | 实施顾问/项目经理 |  |
| 29 | 5.3 | 用户培训确认 | milestone | 1d | 2010-08-11 | 2010-08-11 | 28 | 0d | finish no earlier than 2010-07-16 | 项目组成员/公司领导/终端用户 | 实施顾问/项目经理 | 《用户培训确认单》 |
| 30 | 6 | **系统运行** |  | 6d? | 2010-08-12 | 2010-08-19 |  | 0d |  | 项目组成员/公司领导/终端用户 | 实施顾问/项目经理 |  |
| 31 | 6.1 | 上线运行支持 |  | 5d? | 2010-08-12 | 2010-08-18 | 29 | 0d | start no earlier than 2010-07-19 | 项目组成员/公司领导/终端用户 | 实施顾问/项目经理 |  |
| 32 | 6.2 | 项目总结 | milestone | 1d? | 2010-08-19 | 2010-08-19 | 31 | 0d | start no earlier than 2010-07-23 | 项目经理 | 项目经理 | 《项目阶段总结报告》 |
| 33 | 7 | **项目验收** |  | 3d? | 2010-08-20 | 2010-08-24 |  | 0d |  | 项目组成员 | 项目组成员 |  |
| 34 | 7.1 | 标准功能验收报告 |  | 1d? | 2010-08-20 | 2010-08-20 | 30 | 0d | start no earlier than 2010-07-26 | 项目组成员 | 项目组成员 |  |
| 35 | 7.2 | 实施满意度调查 |  | 1d? | 2010-08-20 | 2010-08-20 | 30 | 2d | start no earlier than 2010-07-26 | 项目组成员 | 项目组成员 |  |
| 36 | 7.3 | 内部交接 |  | 1d? | 2010-08-23 | 2010-08-23 | 34 | 0d | start no earlier than 2010-07-26 | 项目组成员 | 项目组成员 |  |
| 37 | 7.4 | 技术持续服务 |  | 1d? | 2010-08-24 | 2010-08-24 | 36 | 0d | start no earlier than 2010-07-26 | 项目组成员 | 客服部 |  |
