# 新明珠项目上线计划

Schedule from MS Project, 2010-06-02 to 2011-01-07.
WwW.YlmF.CoM

## Calendars

- 标准: Mon-Fri 08:00-12:00, 13:00-17:00; Sat-Sun off.

## Resources

| Resource |
| --- |
| 21集团系统管理员 |
| 22集团人事业务管理员 |
| 23集团薪资业务管理员 |
| 12实施顾问 |
| 11方案顾问 |
| 10用友项目经理 |
| 20真功夫项目经理 |
| 13开发顾问 |
| 24人事业务讲师 |
| 25薪资业务讲师 |

## Schedule

| ID | WBS | Task | Type | Duration | Start | Finish | Predecessors | Total slack | Constraint | Text10 |
| --- | --- | --- | --- | --- | --- | --- | --- | --- | --- | --- |
| 1 | 1 | **金意陶HR项目主计划** |  | 157.5d? | 2010-06-02 | 2011-01-07 |  | 0d |  |  |
| 2 | 1.1 | **蓝图设计** |  | 90.5d? | 2010-06-02 | 2010-10-06 |  | 0d |  |  |
| 3 | 1.1.1 | **需求分析** |  | 61d? | 2010-06-02 | 2010-08-25 |  | 0d |  |  |
| 4 | 1.1.1.1 | 调研资料清单准备 |  | 3d? | 2010-06-02 | 2010-06-04 |  | 0d | finish no earlier than 2010-06-04 | 《调研资料收集清单》 |
| 5 | 1.1.1.2 | 沟通调研资料收集方法 |  | 1d? | 2010-06-07 | 2010-06-07 | 4 | 0d |  |  |
| 6 | 1.1.1.3 | 调研资料收集 |  | 29d | 2010-06-08 | 2010-07-16 | 5 | 0d | finish no earlier than 2010-07-16 |  |
| 7 | 1.1.1.4 | 调研计划沟通及确认 |  | 1d | 2010-07-19 | 2010-07-19 | 6 | 0d | start no earlier than 2010-07-01 |  |
| 8 | 1.1.1.5 | 调研资料整理分析及修订调研问卷 |  | 3d | 2010-07-20 | 2010-07-22 | 7 | 0d |  | 《调研资料重点内容记录文档》《调研问卷》 |
| 9 | 1.1.1.6 | 业务需求调研 |  | 10d | 2010-07-23 | 2010-08-05 | 8 | 0d |  |  |
| 10 | 1.1.1.7 | 需求分析报告初稿编写 |  | 5d | 2010-08-06 | 2010-08-12 | 9 | 0d |  | 《E-HR需求分析报告（初稿）》《项目验收基准》《业务诊断报告》 |
| 11 | 1.1.1.8 | 需求分析报告内部评审 |  | 1d | 2010-08-13 | 2010-08-13 | 10 | 0d |  |  |
| 12 | 1.1.1.9 | 提交需求分析报告及客户方审阅 |  | 5d | 2010-08-16 | 2010-08-20 | 11 | 0d |  |  |
| 13 | 1.1.1.10 | 业务需求讨论和评审 |  | 2d? | 2010-08-23 | 2010-08-24 | 12 | 0d |  |  |
| 14 | 1.1.1.11 | 业务需求分析报告确认 | milestone | 1d? | 2010-08-25 | 2010-08-25 | 13 | 0d |  | 《E-HR需求分析报告（终稿）》《项目验收基准》《业务诊断报告》 |
| 15 | 1.1.2 | **方案设计与方案验收** |  | 29.5d? | 2010-08-26 | 2010-10-06 | 3 | 0d |  |  |
| 16 | 1.1.2.1 | 应用解决方案初稿编写 |  | 10d | 2010-08-26 | 2010-09-08 | 14 | 0d |  | 《E-HR应用解决方案（初稿）》 |
| 17 | 1.1.2.2 | 方案模拟库建立及内部测试 |  | 5d | 2010-09-09 | 2010-09-15 | 16 | 0d |  |  |
| 18 | 1.1.2.3 | 解决方案修订 |  | 2d | 2010-09-16 | 2010-09-17 | 17 | 0d |  | 《E-HR应用解决方案（修订稿）》 |
| 19 | 1.1.2.4 | **应用方案培训** |  | 7.5d? | 2010-09-20 | 2010-09-29 | 18 | 0d |  |  |
| 20 | 1.1.2.4.1 | 培训计划 |  | 1d? | 2010-09-20 | 2010-09-20 |  | 0d |  | 《培训计划》 |
| 21 | 1.1.2.4.2 | 培训环境及培训资料准备 |  | 2d? | 2010-09-21 | 2010-09-22 | 20 | 0d |  | 《培训大纲、岗位操作手册、培训PPT、练习题、考核题》 |
| 22 | 1.1.2.4.3 | 培训开展及考核 |  | 4d | 2010-09-23 | 2010-09-28 | 21 | 0d |  | 《培训考勤表》《培训制度》 |
| 23 | 1.1.2.4.4 | 培训总结 |  | 0.5d? | 2010-09-29 | 2010-09-29 | 22 | 0d |  | 《培训总结》《培训考核成绩表》 |
| 24 | 1.1.2.5 | 应用解决方案讨论和确认 | milestone | 5d | 2010-09-29 | 2010-10-06 | 19 | 0d |  |  |

| ID | WBS | Task | Type | Duration | Start | Finish | Predecessors | Total slack | Free slack | Text10 |
| --- | --- | --- | --- | --- | --- | --- | --- | --- | --- | --- |
| 25 | 1.2 | **系统建设** |  | 25d? | 2010-10-06 | 2010-11-10 | 15 | 0d |  |  |
| 26 | 1.2.1 | **初始化及配置系统** |  | 7d | 2010-10-06 | 2010-10-15 |  | 0d |  |  |
| 27 | 1.2.1.1 | 配置计划沟通 |  | 1d | 2010-10-06 | 2010-10-07 |  | 0d |  | 《配置计划》 |
| 28 | 1.2.1.2 | 初始化系统 |  | 5d | 2010-10-07 | 2010-10-14 | 27 | 0d |  |  |
| 29 | 1.2.1.3 | 检查配置情况 |  | 1d | 2010-10-14 | 2010-10-15 | 28 | 0d |  |  |
| 30 | 1.2.2 | **系统测试** |  | 18d? | 2010-10-15 | 2010-11-10 | 26 | 0d |  |  |
| 31 | 1.2.2.1 | 测试计划沟通与确认 |  | 1d | 2010-10-15 | 2010-10-18 |  | 0d |  | 《E-HR系统测试计划》 |
| 32 | 1.2.2.2 | 测试方案案例编写与确认、测试环境准备 |  | 3d | 2010-10-18 | 2010-10-21 | 31 | 0d |  | 《E-HR系统测试方案与案例》 |
| 33 | 1.2.2.3 | HR业务测试 |  | 10d | 2010-10-21 | 2010-11-04 | 32 | 0d |  | 《E-HR方案测试问题列表》 |
| 34 | 1.2.2.4 | 测试总结 | milestone | 1d | 2010-11-04 | 2010-11-05 | 33 | 0d |  | 《E-HR系统测试总结报告》 |
| 35 | 1.2.2.5 | 解决测试问题及调整业务解决方案为终版 |  | 3d? | 2010-11-05 | 2010-11-10 | 34 | 0d |  | 《E-HR应用解决方案（终稿）》 |
| 36 | 1.3 | **切换上线** |  | 39d? | 2010-11-10 | 2011-01-04 | 25 | 0d |  |  |
| 37 | 1.3.1 | 最终用户权限划分 |  | 1d? | 2010-11-10 | 2010-11-11 |  | 41d |  |  |
| 38 | 1.3.2 | 岗位操作说明书编写 |  | 5d | 2010-11-10 | 2010-11-17 |  | 33d | 0d | 《E-HR系统岗位操作说明书》 |
| 39 | 1.3.3 | 系统运行制度编写 |  | 3d | 2010-11-10 | 2010-11-15 |  | 39d |  |  |
| 40 | 1.3.4 | **组织人事数据采集及导入** |  | 14d? | 2010-11-10 | 2010-11-30 |  | 0d |  |  |
| 41 | 1.3.4.1 | 数据采集方案编写 |  | 3d | 2010-11-10 | 2010-11-15 |  | 0d |  | 《人事、组织采集方案》 |
| 42 | 1.3.4.2 | 数据采集培训 |  | 1d? | 2010-11-15 | 2010-11-16 | 41 | 0d |  |  |
| 43 | 1.3.4.3 | 数据采集开展 |  | 7d | 2010-11-16 | 2010-11-25 | 42 | 0d |  |  |
| 44 | 1.3.4.4 | 数据导入或录入 |  | 3d | 2010-11-25 | 2010-11-30 | 43 | 0d |  |  |
| 45 | 1.3.5 | **最终培训用户** |  | 14d? | 2010-11-17 | 2010-12-07 |  | 9d |  |  |
| 46 | 1.3.5.1 | 培训计划 |  | 1d? | 2010-11-17 | 2010-11-18 | 38 | 33d | 0d | 《最终用户培训计划》 |
| 47 | 1.3.5.2 | 培训环境及培训资料准备 |  | 3d | 2010-11-18 | 2010-11-23 | 46 | 33d |  | 《培训大纲、岗位操作手册、培训PPT、练习题、考核题》 |
| 48 | 1.3.5.3 | 培训开展及考核 |  | 4d | 2010-11-30 | 2010-12-06 | 44 | 0d |  | 《培训考勤表》《培训制度》 |
| 49 | 1.3.5.4 | 培训总结 |  | 1d? | 2010-12-06 | 2010-12-07 | 48 | 23d |  | 《培训总结》《培训考核成绩表》 |
| 50 | 1.3.6 | 导入的人事组织数据核对 |  | 2d | 2010-12-06 | 2010-12-08 | 48 | 0d |  |  |

| ID | WBS | Task | Type | Duration | Start | Finish | Predecessors | Total slack | Text10 |
| --- | --- | --- | --- | --- | --- | --- | --- | --- | --- |
| 51 | 1.3.7 | **薪资上线** |  | 7d | 2010-12-08 | 2010-12-17 | 50 | 0d |  |
| 52 | 1.3.7.1 | 薪资上线前动态数据准备 |  | 2d | 2010-12-08 | 2010-12-10 | 50 | 0d |  |
| 53 | 1.3.7.2 | 薪资上线指南准备 |  | 2d | 2010-12-08 | 2010-12-10 |  | 5d |  |
| 54 | 1.3.7.3 | 薪资集中上线及核对 |  | 5d | 2010-12-10 | 2010-12-17 | 52 | 0d |  |
| 55 | 1.3.8 | 上线报告签定 | milestone | 2d | 2010-12-17 | 2010-12-21 | 51 | 0d | 《上线报告》 |
| 56 | 1.3.9 | 上线持续支持 |  | 10d? | 2010-12-21 | 2011-01-04 | 55 | 0d |  |
| 57 | 1.4 | **项目验收** |  | 3d? | 2011-01-04 | 2011-01-07 | 56 | 0d |  |
| 58 | 1.4.1 | 项目总结 |  | 2d? | 2011-01-04 | 2011-01-06 |  | 0d |  |
| 59 | 1.4.2 | 项目验收 | milestone | 1d? | 2011-01-06 | 2011-01-07 | 58 | 0d | 《验收报告》 |
